# SQLdm 6.2 Project Schedule 2

Schedule from MS Project, 2010-03-03 to 2010-06-15.
BBS Technologies, Inc.

## Calendars

- Standard: Mon-Fri 08:00-12:00, 13:00-17:00; Sat-Sun off. Exceptions (off unless hours are given): 2010-03-15 (Personal Leave Float), 2010-04-05 (Personal Time Float), 2010-04-15 (Quarterly Meeting), 2010-05-03 (Personal Leave Float), 2010-05-31 (Memorial Day Holiday), 2010-06-07 (Personal time Float).

## Resources

| Resource |
| --- |
| Barry |
| Kurt |
| Vicky |
| TBD |
| Quentin |

## Schedule

| ID | WBS | Task | Duration | Start | Finish | Total slack | Resources | Work |
| --- | --- | --- | --- | --- | --- | --- | --- | --- |
| 1 | 1 | **Development** | 68.23d? | 2010-03-03 | 2010-06-15 | 0d |  | 1108h |
| 2 | 1.1 | **M.5** | 11.25d? | 2010-03-03 | 2010-03-19 | 56.98d |  | 112h |
| 3 | 1.1.1 | **Wait Stat Monitoring (WS)** | 5.71d? | 2010-03-08 | 2010-03-16 | 59.52d |  | 32h |
| 4 | 1.1.1.1 | WS - Collection Service | 2.86d? | 2010-03-08 | 2010-03-10 | 62.37d | Vicky [70%] | 16h |
| 5 | 1.1.1.2 | WS - Management Service | 2.86d? | 2010-03-10 | 2010-03-16 | 59.52d | Vicky [70%] | 16h |
| 6 | 1.1.2 | **Maintenance PRs** | 8.75d? | 2010-03-03 | 2010-03-16 | 59.48d |  | 56h |
| 7 | 1.1.2.1 | Barry | 8.75d? | 2010-03-03 | 2010-03-16 | 59.48d | Barry [80%] | 56h |
| 8 | 1.1.3 | Web Help | 2.5d? | 2010-03-16 | 2010-03-19 | 56.98d | Barry [80%] | 16h |
| 9 | 1.1.4 | 6.1 Hotfix 1 Fixes | 1.43d? | 2010-03-16 | 2010-03-18 | 58.09d | Vicky [70%] | 8h |
| 10 | 1.2 | **M1** | 23.57d? | 2010-03-03 | 2010-04-07 | 44.66d |  | 240h |
| 11 | 1.2.1 | **Design Churn** | 13.89d? | 2010-03-03 | 2010-03-23 | 54.34d |  | 32h |
| 12 | 1.2.1.1 | Spec and Schedule Adjustments | 3.75d? | 2010-03-18 | 2010-03-23 | 54.34d | Vicky [80%] | 24h |
| 13 | 1.2.1.2 | Churn Time | 1d? | 2010-03-03 | 2010-03-03 | 67.23d | Quentin | 8h |
| 14 | 1.2.2 | **Wait Stat Monitoring (WS)** | 22.57d? | 2010-03-04 | 2010-04-07 | 44.09d |  | 128h |
| 15 | 1.2.2.1 | WS - Desktop Client | 17.14d? | 2010-03-04 | 2010-04-06 | 44.09d | Quentin [70%] | 96h |
| 16 | 1.2.2.2 | WS - Repository | 2.86d? | 2010-03-23 | 2010-03-26 | 51.48d | Vicky [70%] | 16h |
| 17 | 1.2.2.3 | **WS - Unit Testing** | 6.82d? | 2010-03-26 | 2010-04-07 | 44.66d |  | 16h |
| 18 | 1.2.2.3.1 | Unit Testing | 1.43d? | 2010-03-26 | 2010-03-30 | 50.05d | Vicky [70%] | 8h |
| 19 | 1.2.2.3.2 | Unit Testing | 1.43d? | 2010-04-06 | 2010-04-07 | 44.66d | Quentin [70%] | 8h |
| 20 | 1.2.3 | **Wait Stat Monitoring of Queries (WSQ)** | 4.29d? | 2010-03-30 | 2010-04-06 | 37.77d |  | 24h |
| 21 | 1.2.3.1 | WSQ - Management Service | 4.29d? | 2010-03-30 | 2010-04-06 | 37.77d | Vicky [70%] | 24h |
| 22 | 1.2.4 | **Maintenance PRs** | 8.75d? | 2010-03-19 | 2010-03-31 | 48.23d |  | 56h |
| 23 | 1.2.4.1 | Barry | 8.75d? | 2010-03-19 | 2010-03-31 | 48.23d | Barry [80%] | 56h |
| 24 | 1.3 | **M2** | 18.18d? | 2010-04-01 | 2010-04-29 | 30.05d |  | 200h |
| 25 | 1.3.1 | **Wait Stat Monitoring (WS)** | 4.29d? | 2010-04-07 | 2010-04-13 | 40.37d |  | 24h |
| 26 | 1.3.1.1 | WS - Categorizing Waits | 4.29d? | 2010-04-07 | 2010-04-13 | 40.37d | Quentin [70%] | 24h |

| ID | WBS | Task | Duration | Start | Finish | Total slack | Resources | Work |
| --- | --- | --- | --- | --- | --- | --- | --- | --- |
| 27 | 1.3.2 | **Wait Stat Monitoring of Queries (WSQ) - Scheduled Refresh Only** | 14.29d? | 2010-04-06 | 2010-04-27 | 27.77d |  | 80h |
| 28 | 1.3.2.1 | WSQ - Collection Service | 10d? | 2010-04-06 | 2010-04-21 | 27.77d | Vicky [70%] | 56h |
| 29 | 1.3.2.2 | WSQ - Repository | 4.29d? | 2010-04-21 | 2010-04-27 | 23.48d | Vicky [70%] | 24h |
| 30 | 1.3.3 | **Maintenance PRs** | 12.5d? | 2010-04-01 | 2010-04-21 | 35.73d |  | 80h |
| 31 | 1.3.3.1 | Barry | 12.5d? | 2010-04-01 | 2010-04-21 | 35.73d | Barry [80%] | 80h |
| 32 | 1.3.4 | **Previous Milestone PRs** | 10.32d? | 2010-04-13 | 2010-04-29 | 30.05d |  | 16h |
| 33 | 1.3.4.1 | Vicky | 1.43d? | 2010-04-27 | 2010-04-29 | 30.05d | Vicky [70%] | 8h |
| 34 | 1.3.4.2 | Quentin | 1.25d? | 2010-04-13 | 2010-04-16 | 39.12d | Quentin [80%] | 8h |
| 35 | 1.4 | **M2.5** | 15.5d? | 2010-04-16 | 2010-05-10 | 20.62d |  | 132h |
| 36 | 1.4.1 | **Wait Stat Monitoring of Queries (WSQ) - View** | 14.79d? | 2010-04-16 | 2010-05-07 | 20.62d |  | 116h |
| 37 | 1.4.1.1 | WSQ - Collection Service | 5.71d? | 2010-04-29 | 2010-05-07 | 16.34d | Vicky [70%] | 32h |
| 38 | 1.4.1.2 | WSQ - Desktop Client | 12.5d? | 2010-04-16 | 2010-05-05 | 20.62d | Quentin [80%] | 80h |
| 39 | 1.4.1.3 | **WSQ - Unit Testing** | 0.62d? | 2010-05-05 | 2010-05-06 | 26d |  | 4h |
| 40 | 1.4.1.3.1 | Quentin | 0.62d? | 2010-05-05 | 2010-05-06 | 26d | Quentin [80%] | 4h |
| 41 | 1.4.2 | **Previous Milestone PRs** | 12.11d? | 2010-04-21 | 2010-05-10 | 23.62d |  | 16h |
| 42 | 1.4.2.1 | Vicky | 0.71d? | 2010-05-07 | 2010-05-10 | 23.62d | Vicky [70%] | 4h |
| 43 | 1.4.2.2 | Quentin | 0.62d? | 2010-05-06 | 2010-05-06 | 25.37d | Quentin [80%] | 4h |
| 44 | 1.4.2.3 | Barry | 1.25d? | 2010-04-21 | 2010-04-22 | 34.48d | Barry [80%] | 8h |
| 45 | 1.5 | **M3** | 18.75d? | 2010-04-22 | 2010-05-20 | 15.73d |  | 248h |
| 46 | 1.5.1 | **Wait Stat Monitoring of Queries (WSQ) - View** | 8d? | 2010-05-06 | 2010-05-18 | 12.37d |  | 80h |
| 47 | 1.5.1.1 | WSQ - Collection Service | 5d? | 2010-05-10 | 2010-05-17 | 10.62d | Vicky [80%] | 32h |
| 48 | 1.5.1.2 | WSQ - Desktop Client | 5d? | 2010-05-06 | 2010-05-13 | 20.37d | Quentin [80%] | 32h |
| 49 | 1.5.1.3 | **WSQ - Unit Testing** | 3d? | 2010-05-13 | 2010-05-18 | 17.38d |  | 16h |
| 50 | 1.5.1.3.1 | Vicky | 1.25d? | 2010-05-17 | 2010-05-18 | 17.38d | Vicky [80%] | 8h |
| 51 | 1.5.1.3.2 | Quentin | 1.25d? | 2010-05-13 | 2010-05-17 | 19.12d | Quentin [80%] | 8h |

| ID | WBS | Task | Duration | Start | Finish | Total slack | Constraint | Resources | Work |
| --- | --- | --- | --- | --- | --- | --- | --- | --- | --- |
| 52 | 1.5.2 | **Maintenance PRs** | 17.5d? | 2010-04-22 | 2010-05-19 | 16.98d |  |  | 152h |
| 53 | 1.5.2.1 | Barry | 17.5d? | 2010-04-22 | 2010-05-19 | 16.98d |  | Barry [80%] | 112h |
| 54 | 1.5.2.2 | Kurt | 6.25d? | 2010-05-10 | 2010-05-18 | 17.98d | start no earlier than 2010-05-10 | Kurt [80%] | 40h |
| 55 | 1.5.3 | **Previous Milestone PRs** | 3.39d? | 2010-05-17 | 2010-05-20 | 15.73d |  |  | 16h |
| 56 | 1.5.3.1 | Vicky | 0.62d? | 2010-05-18 | 2010-05-19 | 16.75d |  | Vicky [80%] | 4h |
| 57 | 1.5.3.2 | Quentin | 0.62d? | 2010-05-17 | 2010-05-17 | 18.5d |  | Quentin [80%] | 4h |
| 58 | 1.5.3.3 | Barry | 1.25d? | 2010-05-19 | 2010-05-20 | 15.73d |  | Barry [80%] | 8h |
| 59 | 1.6 | **PFC1** | 18.5d? | 2010-05-17 | 2010-06-15 | 0d |  |  | 176h |
| 60 | 1.6.1 | **Maintenance PRs** | 6.52d? | 2010-05-17 | 2010-05-26 | 11.98d |  |  | 64h |
| 61 | 1.6.1.1 | Quentin | 2.5d? | 2010-05-17 | 2010-05-20 | 16d |  | Quentin [80%] | 16h |
| 62 | 1.6.1.2 | Vicky | 3.75d? | 2010-05-19 | 2010-05-25 | 13d |  | Vicky [80%] | 24h |
| 63 | 1.6.1.3 | Barry | 3.75d? | 2010-05-20 | 2010-05-26 | 11.98d |  | Barry [80%] | 24h |
| 64 | 1.6.2 | **Previous Milestone PRs** | 16d? | 2010-05-20 | 2010-06-15 | 0d |  |  | 112h |
| 65 | 1.6.2.1 | Quentin | 6.25d? | 2010-05-20 | 2010-06-09 | 3.75d |  | Quentin [80%] | 40h |
| 66 | 1.6.2.2 | Vicky | 5d? | 2010-05-25 | 2010-06-15 | 0d |  | Vicky [80%] | 32h |
| 67 | 1.6.2.3 | Barry | 6.25d? | 2010-05-26 | 2010-06-04 | 5.73d |  | Barry [80%] | 40h |
