# SQLdm 6.2 Project Schedule 2

Schedule from MS Project, 2010-11-05 to 2011-01-14.
BBS Technologies, Inc.

## Calendars

- Standard: Mon-Fri 08:00-12:00, 13:00-17:00; Sat-Sun off. Exceptions (off unless hours are given): 2010-11-25 to 2010-11-26 (Thanksgiving Holiday), 2010-12-01 (Personal Leave Float), 2010-12-23 to 2010-12-24 (Christmas Holiday), 2011-01-03 (Personal Leave Float).

## Resources

| Resource |
| --- |
| Barry |
| Vicky |
| Quentin |

## Schedule

| ID | WBS | Task | Duration | Start | Finish | Total slack | Constraint | Resources | Work |
| --- | --- | --- | --- | --- | --- | --- | --- | --- | --- |
| 1 | 1 | **Development** | 44.67d? | 2010-11-05 | 2011-01-14 | 0d |  |  | 728h |
| 2 | 1.1 | **M1** | 20.62d? | 2010-11-05 | 2010-12-08 | 21.67d |  |  | 224h |
| 3 | 1.1.1 | PR 15595 - Collection service keeps going down on some environment | 0.67d? | 2010-11-05 | 2010-11-05 | 44d |  | Vicky [75%] | 4h |
| 4 | 1.1.2 | PR 15436 - Job Alerting | 20d? | 2010-11-05 | 2010-12-07 | 21.67d | start no earlier than 2010-11-05 | Barry [80%] | 128h |
| 5 | 1.1.3 | PR 15438 - FRQ: Ability to specify a dynamic database list for table statistics. | 1.33d? | 2010-11-05 | 2010-11-08 | 42.67d |  | Vicky [75%] | 8h |
| 6 | 1.1.4 | PR 15476 - Fragmentation % is not getting updated in Table and Indexes view | 2.67d? | 2010-11-09 | 2010-11-11 | 40d | start no earlier than 2010-11-08 | Vicky [75%] | 16h |
| 7 | 1.1.5 | **Database File Monitoring Swag** | 11d? | 2010-11-11 | 2010-11-30 | 29d |  |  | 48h |
| 8 | 1.1.5.1 | Back End | 8d? | 2010-11-11 | 2010-11-30 | 29d |  | Vicky [75%] | 48h |
| 9 | 1.1.6 | PR 15886 - Combine multiple calls into a single refresh (Server Summary) | 2.67d? | 2010-11-30 | 2010-12-06 | 26.33d |  | Vicky [75%] | 16h |
| 10 | 1.1.7 | PR 15051 - Refactor the OS Metrics calculations | 0.62d? | 2010-12-08 | 2010-12-08 | 24.04d | start no earlier than 2010-11-08 | Barry [80%] | 4h |
| 11 | 1.2 | **M2** | 26d? | 2010-11-05 | 2010-12-15 | 18.67d |  |  | 212h |
| 12 | 1.2.1 | PR 15887 - Optimize TSQL in batches using SQLdoctor - as much as can be done in timeframe | 2.67d? | 2010-12-06 | 2010-12-08 | 23.67d |  | Vicky [75%] | 16h |
| 13 | 1.2.2 | PR 15888 - Prevent redundant calling of OS metrics batches, especially in Server Summary | 2.67d? | 2010-12-09 | 2010-12-13 | 21d |  | Vicky [75%] | 16h |
| 14 | 1.2.3 | **Database File Monitoring Swag** | 22.67d? | 2010-11-05 | 2010-12-10 | 22d |  |  | 120h |
| 15 | 1.2.3.1 | Front End | 16.67d? | 2010-11-05 | 2010-12-10 | 22d |  | Quentin [90%] | 120h |
| 16 | 1.2.4 | PR 15889 - Look for and remove unnecessary refreshes | 3.33d? | 2010-12-10 | 2010-12-15 | 18.67d |  | Quentin [90%] | 24h |
| 17 | 1.2.5 | PR 15713 - SQLdoctor optimization of repository | 2.5d? | 2010-12-08 | 2010-12-13 | 21.54d |  | Barry [80%] | 16h |
| 18 | 1.2.6 | Maintenance PRs | 0.67d? | 2010-12-13 | 2010-12-14 | 20.33d |  | Vicky [75%] | 4h |
| 19 | 1.2.7 | **Previous Milestone PRs** | 2.5d? | 2010-12-13 | 2010-12-15 | 19.04d |  |  | 16h |
| 20 | 1.2.7.1 | Barry | 2.5d? | 2010-12-13 | 2010-12-15 | 19.04d |  | Barry [80%] | 16h |
| 21 | 1.3 | **M3** | 13.67d? | 2010-12-14 | 2011-01-05 | 6.67d |  |  | 148h |
| 22 | 1.3.1 | PR 15517 - Extension of PR 2015044 -- On Windows 2008 R2, Idle Time values appear to drastically change Disk Busy metrics, depending on sample rate | 1.33d? | 2010-12-14 | 2010-12-15 | 19d |  | Vicky [75%] | 8h |
| 23 | 1.3.2 | PR 15890 - Improve cancel behavior - as much as can be done in timeframe | 2d? | 2010-12-15 | 2010-12-17 | 17d |  | Vicky [75%] | 12h |
| 24 | 1.3.3 | PR 15437 - FRQ: improve filtering options in the sessions view. | 3.75d? | 2010-12-15 | 2010-12-28 | 12.29d |  | Barry [80%] | 24h |
| 25 | 1.3.4 | PR 15016 - FRQ: Include information in the Overview mouseovers for missing SQL counters | 1.25d? | 2010-12-28 | 2010-12-29 | 11.04d |  | Barry [80%] | 8h |
| 26 | 1.3.5 | PR 15439 - FRQ: Need 'Table' defined as an alert variable | 1.25d? | 2010-12-29 | 2010-12-30 | 9.79d |  | Barry [80%] | 8h |
| 27 | 1.3.6 | PR 15891 - Fix the flicker/crawling issues when loading the UI | 4.44d? | 2010-12-16 | 2010-12-28 | 12.22d | start no earlier than 2010-11-08 | Quentin [90%] | 32h |
| 28 | 1.3.7 | PR 15755 - Split large refreshes into multiple calls (Proc Cache Only) | 1.11d? | 2010-12-30 | 2010-12-31 | 8.89d |  | Quentin [90%] | 8h |
| 29 | 1.3.8 | Reduce or remove the use of sysprocesses in SQL 2005+ | 1.33d? | 2010-12-17 | 2010-12-20 | 15.67d |  | Vicky [75%] | 8h |
| 30 | 1.3.9 | PR 15524 - Unhandled exception and the red "X" in the graph panels in Disk view when navigating back and forth between the previous and next snapshot. | 1.11d? | 2010-12-31 | 2011-01-04 | 7.78d |  | Quentin [90%] | 8h |
| 31 | 1.3.10 | PR 15819 - UTCOccurrenceDateTime is null in DeadlockProcesses | 1.33d? | 2010-12-21 | 2010-12-22 | 14.33d |  | Vicky [75%] | 8h |

| ID | WBS | Task | Duration | Start | Finish | Total slack | Resources | Work |
| --- | --- | --- | --- | --- | --- | --- | --- | --- |
| 32 | 1.3.11 | **Previous Milestone PRs** | 7.67d? | 2010-12-22 | 2011-01-05 | 6.67d |  | 24h |
| 33 | 1.3.11.1 | Barry | 1.25d? | 2010-12-30 | 2011-01-04 | 8.54d | Barry [80%] | 8h |
| 34 | 1.3.11.2 | Quentin | 1.11d? | 2011-01-04 | 2011-01-05 | 6.67d | Quentin [90%] | 8h |
| 35 | 1.3.11.3 | Vicky | 1.33d? | 2010-12-22 | 2011-01-04 | 8d | Vicky [75%] | 8h |
| 36 | 1.4 | **M4** | 8.54d? | 2011-01-04 | 2011-01-14 | 0d |  | 144h |
| 37 | 1.4.1 | **Maintenance PRs** | 8.54d? | 2011-01-04 | 2011-01-14 | 0d |  | 144h |
| 38 | 1.4.1.1 | Barry | 7.5d? | 2011-01-04 | 2011-01-13 | 1.04d | Barry [80%] | 48h |
| 39 | 1.4.1.2 | Quentin | 6.67d? | 2011-01-05 | 2011-01-14 | 0d | Quentin [90%] | 48h |
| 40 | 1.4.1.3 | Vicky | 8d? | 2011-01-04 | 2011-01-14 | 0d | Vicky [75%] | 48h |
