Schedule from MS Project, 2008-09-24 to 2009-02-26.

## Calendars

- Standard: Mon-Fri 08:00-12:00, 13:00-17:00; Sat-Sun off. Exceptions (off unless hours are given): 2008-10-06 (Sick), 2008-11-03 (Sick), 2008-11-27 to 2008-11-28 (Vacation), 2008-12-01 (Sick), 2008-12-24 to 2008-12-25 (Vacation), 2009-01-01 (Vacation), 2009-01-05 (Sick), 2009-02-02 (Sick).

## Resources

| Resource |
| --- |
| Kurt |
| Robert |
| Trent |
| Vicky |
| Barry |
| TBD |

## Schedule

| ID | WBS | Task | Duration | Start | Finish | Predecessors | Total slack | Free slack | Constraint | Resources | Work |
| --- | --- | --- | --- | --- | --- | --- | --- | --- | --- | --- | --- |
| 1 | 1 | **Planning** | 33.75d? | 2008-09-24 | 2008-11-12 |  | 68d |  |  |  | 488h |
| 2 | 1.1 | Server Tags | 6d? | 2008-09-24 | 2008-10-01 |  | 95.75d |  |  | Trent [50%] | 24h |
| 3 | 1.2 | Alert Rules & Actions | 20d? | 2008-10-02 | 2008-10-30 |  | 75.75d |  |  | Trent [50%] | 80h |
| 4 | 1.3 | Reports 2.0 | 13.33d? | 2008-09-24 | 2008-10-14 |  | 83.42d |  |  | Robert [75%] | 80h |
| 5 | 1.4 | Database Mirror Monitoring | 18.75d? | 2008-10-16 | 2008-11-12 |  | 68d |  | start no earlier than 2008-10-16 | Barry [80%] | 120h |
| 6 | 1.5 | PowerShell Integration | 20d? | 2008-09-30 | 2008-11-04 |  | 69.75d | 0d | start no earlier than 2008-09-30 | Kurt [50%] | 80h |
| 7 | 1.6 | Enterprise Management Solution Integration | 4d? | 2008-11-05 | 2008-11-10 | 6 | 69.75d |  |  | Kurt [75%] | 24h |
| 8 | 1.7 | SQL Event Log Alerts | 6.67d? | 2008-10-14 | 2008-10-22 |  | 81.75d |  |  | Robert [75%] | 40h |
| 9 | 1.8 | Installation/Upgrade | 5d? | 2008-09-24 | 2008-09-30 |  | 96.75d |  |  | TBD | 40h |
| 11 | 2 | **Planning Backlog** | 20d? | 2008-09-24 | 2008-10-22 |  | 81.75d |  |  |  | 240h |
| 12 | 2.1 | Standard/Pro Editions | 10d? | 2008-09-24 | 2008-10-08 |  | 91.75d |  |  |  | 40h |
| 13 | 2.2 | Wait and Queue Monitoring | 20d? | 2008-09-24 | 2008-10-22 |  | 81.75d |  |  |  | 80h |
| 14 | 2.3 | Query Wait Monitoring | 13.33d? | 2008-09-24 | 2008-10-14 |  | 88.42d |  |  |  | 80h |
| 15 | 2.4 | SQLdm Change Auditing | 5d? | 2008-09-24 | 2008-09-30 |  | 96.75d |  |  |  | 40h |
| 17 | 3 | **Development** | 65.75d? | 2008-11-17 | 2009-02-26 |  | 0d |  | start no earlier than 2008-11-17 |  | 1416h |
| 18 | 3.1 | **M1** | 13d? | 2008-11-17 | 2008-12-08 |  | 52.75d |  |  |  | 248h |
| 19 | 3.1.1 | **Installation\Upgrade** | 11d? | 2008-11-17 | 2008-12-04 |  | 54.75d |  |  |  | 32h |
| 20 | 3.1.1.1 | IU - Upgrade Infragistics in projects | 2d? | 2008-11-17 | 2008-11-18 |  | 63.75d |  |  | Trent [50%] | 8h |
| 21 | 3.1.1.2 | IU - Major Upgrade | 6d? | 2008-11-19 | 2008-12-04 |  | 54.75d |  |  | Trent [50%] | 24h |
| 22 | 3.1.2 | **PowerShell Integration (PS)** | 13d? | 2008-11-17 | 2008-12-08 |  | 52.75d |  |  |  | 64h |
| 23 | 3.1.2.1 | PS - PowerShell Provider | 6.25d? | 2008-11-17 | 2008-12-03 |  | 56.5d |  |  | Kurt [80%] | 40h |
| 24 | 3.1.2.2 | PS - Cmdlets | 1.25d? | 2008-12-03 | 2008-12-04 |  | 55.25d |  |  | Kurt [80%] | 8h |
| 25 | 3.1.2.3 | PS - Cmdlets Help | 1.25d? | 2008-12-04 | 2008-12-05 |  | 54d |  |  | Kurt [80%] | 8h |
| 26 | 3.1.2.4 | PS - Unit Testing | 1.25d? | 2008-12-05 | 2008-12-08 |  | 52.75d |  |  | Kurt [80%] | 8h |

| ID | WBS | Task | Duration | Start | Finish | Total slack | Resources | Work |
| --- | --- | --- | --- | --- | --- | --- | --- | --- |
| 27 | 3.1.3 | **Database Mirror Monitoring (DM)** | 11.5d? | 2008-11-17 | 2008-12-05 | 54.25d |  | 48h |
| 28 | 3.1.3.1 | DM - Repository Additions | 1.25d? | 2008-11-17 | 2008-11-24 | 60.5d | Barry [80%] | 8h |
| 29 | 3.1.3.2 | DM - Real-Time Probe | 2.5d? | 2008-11-24 | 2008-11-26 | 58d | Barry [80%] | 16h |
| 30 | 3.1.3.3 | DM - Scheduled Probe | 3.75d? | 2008-11-26 | 2008-12-05 | 54.25d | Barry [80%] | 24h |
| 31 | 3.1.4 | **SQL Event Log Alerts (SL)** | 9.75d? | 2008-11-17 | 2008-12-03 | 56d |  | 56h |
| 32 | 3.1.4.1 | SL - Desktop Client | 2.5d? | 2008-11-17 | 2008-11-19 | 63.25d | Vicky [80%] | 16h |
| 33 | 3.1.4.2 | SL - Collection Service | 3.75d? | 2008-11-19 | 2008-11-25 | 59.5d | Vicky [80%] | 24h |
| 34 | 3.1.4.3 | SL - Repository | 1.25d? | 2008-11-25 | 2008-12-02 | 57.25d | Vicky [80%] | 8h |
| 35 | 3.1.4.4 | SL - Unit Testing | 1.25d? | 2008-12-02 | 2008-12-03 | 56d | Vicky [80%] | 8h |
| 36 | 3.1.5 | **Reports 2.0 (R2)** | 10.5d? | 2008-11-17 | 2008-12-04 | 55.25d |  | 48h |
| 37 | 3.1.5.1 | R2 - Launch Pad | 3.75d? | 2008-11-17 | 2008-11-20 | 62d | Robert [80%] | 24h |
| 38 | 3.1.5.2 | R2 - Top Server Report | 3.75d? | 2008-11-20 | 2008-12-04 | 55.25d | Robert [80%] | 24h |
| 39 | 3.2 | **M2** | 21.5d? | 2008-12-04 | 2009-01-08 | 33.75d |  | 176h |
| 40 | 3.2.1 | **Cross Domain Support (CD)** | 6.25d? | 2008-12-09 | 2008-12-17 | 46.5d |  | 40h |
| 41 | 3.2.1.1 | CD - Research | 2.5d? | 2008-12-09 | 2008-12-11 | 50.25d | Kurt [80%] | 16h |
| 42 | 3.2.1.2 | CD - Implementation | 3.75d? | 2008-12-11 | 2008-12-17 | 46.5d | Kurt [80%] | 24h |
| 43 | 3.2.2 | **Server Tags (ST)** | 21d? | 2008-12-05 | 2009-01-08 | 33.75d |  | 48h |
| 44 | 3.2.2.1 | ST - Database – table, stored procedures, upgrade | 6d? | 2008-12-05 | 2008-12-12 | 48.75d | Trent [50%] | 24h |
| 45 | 3.2.2.2 | ST - Management Service – API | 2d? | 2008-12-17 | 2008-12-18 | 44.75d | Trent [50%] | 8h |
| 46 | 3.2.2.3 | ST - Tag Manager | 4d? | 2008-12-19 | 2009-01-08 | 33.75d | Trent [50%] | 16h |
| 47 | 3.2.3 | **Reports 2.0 (R2)** | 16.75d? | 2008-12-04 | 2008-12-31 | 38.5d |  | 88h |
| 48 | 3.2.3.1 | R2 - Forecast: Disk Space Usage Report | 3.75d? | 2008-12-04 | 2008-12-10 | 51.5d | Robert [80%] | 24h |
| 49 | 3.2.3.2 | R2 - Forecast: Database Growth Report | 3.75d? | 2008-12-10 | 2008-12-15 | 47.75d | Robert [80%] | 24h |
| 50 | 3.2.3.3 | R2 - Forecast: Table Growth Report | 3.75d? | 2008-12-16 | 2008-12-19 | 44d | Robert [80%] | 24h |
| 51 | 3.2.3.4 | R2 - Unit Testing | 2.5d? | 2008-12-19 | 2008-12-31 | 38.5d | Robert [80%] | 16h |

| ID | WBS | Task | Duration | Start | Finish | Total slack | Resources | Work |
| --- | --- | --- | --- | --- | --- | --- | --- | --- |
| 52 | 3.3 | **M3** | 32.25d? | 2008-12-03 | 2009-01-22 | 23.75d |  | 504h |
| 53 | 3.3.1 | **Alert Actions (AA)** | 21d? | 2008-12-17 | 2009-01-21 | 25.5d |  | 96h |
| 54 | 3.3.1.1 | AA - R&D | 3.75d? | 2008-12-17 | 2009-01-02 | 36.75d | Kurt [80%] | 24h |
| 55 | 3.3.1.2 | AA - Database | 3.75d? | 2009-01-06 | 2009-01-09 | 33d | Kurt [80%] | 24h |
| 56 | 3.3.1.3 | AA - Management Service | 3.75d? | 2009-01-09 | 2009-01-15 | 29.25d | Kurt [80%] | 24h |
| 57 | 3.3.1.4 | AA - Collection Service | 3.75d? | 2009-01-15 | 2009-01-21 | 25.5d | Kurt [80%] | 24h |
| 58 | 3.3.2 | **Database Mirror Monitoring (DM)** | 30.14d? | 2008-12-05 | 2009-01-22 | 24.11d |  | 96h |
| 59 | 3.3.2.1 | DM - Real-Time Server View | 10d? | 2008-12-05 | 2009-01-13 | 31.25d | Barry [70%] | 56h |
| 60 | 3.3.2.2 | DM - Unit Testing | 7.14d? | 2009-01-13 | 2009-01-22 | 24.11d | Barry [70%] | 40h |
| 61 | 3.3.3 | **Server Tags (ST)** | 10d? | 2009-01-09 | 2009-01-22 | 23.75d |  | 40h |
| 62 | 3.3.3.1 | ST - Desktop Client – Add Server Wizard and Properties | 2d? | 2009-01-09 | 2009-01-12 | 31.75d | Trent [50%] | 8h |
| 63 | 3.3.3.2 | ST - Desktop Client – Server Tree | 2d? | 2009-01-13 | 2009-01-14 | 29.75d | Trent [50%] | 8h |
| 64 | 3.3.3.3 | ST - Desktop Client – Additional filters | 2d? | 2009-01-15 | 2009-01-16 | 27.75d | Trent [50%] | 8h |
| 65 | 3.3.3.4 | ST - Desktop Client – Application Security & Custom Counters | 4d? | 2009-01-19 | 2009-01-22 | 23.75d | Trent [50%] | 16h |
| 66 | 3.3.4 | **Reports 2.0 (R2)** | 32.25d? | 2008-12-03 | 2009-01-22 | 23.75d |  | 272h |
| 67 | 3.3.4.1 | R2 - Addition Data Collection | 6.25d? | 2008-12-03 | 2008-12-11 | 49.75d | Vicky [80%] | 40h |
| 68 | 3.3.4.2 | R2 - Enterprise Summary Report | 3.75d? | 2008-12-31 | 2009-01-07 | 34.75d | Robert [80%] | 24h |
| 69 | 3.3.4.3 | R2 - Server Summary Report | 3.75d? | 2009-01-08 | 2009-01-13 | 31d | Robert [80%] | 24h |
| 70 | 3.3.4.4 | R2 - Server Statistics Report | 3.75d? | 2009-01-13 | 2009-01-20 | 26.25d | Robert [80%] | 24h |
| 71 | 3.3.4.5 | R2 - Query Overview Report | 3.75d? | 2008-12-12 | 2008-12-18 | 45d | Vicky [80%] | 24h |
| 72 | 3.3.4.6 | R2 - Top Queries Report | 3.75d? | 2008-12-18 | 2008-12-26 | 41.25d | Vicky [80%] | 24h |
| 73 | 3.3.4.7 | R2 - Query Statistics Report | 3.75d? | 2008-12-26 | 2009-01-02 | 37.5d | Vicky [80%] | 24h |
| 74 | 3.3.4.8 | R2 - Top Databases Report | 3.75d? | 2009-01-02 | 2009-01-08 | 33.75d | Vicky [80%] | 24h |
| 75 | 3.3.4.9 | R2 - Database Statistics Report | 3.75d? | 2009-01-09 | 2009-01-14 | 30d | Vicky [80%] | 24h |
| 76 | 3.3.4.10 | R2 - Top Database Applications Report | 3.75d? | 2009-01-14 | 2009-01-20 | 26.25d | Vicky [80%] | 24h |
| 77 | 3.3.4.11 | R2 - Unit Testing | 2.5d? | 2009-01-20 | 2009-01-22 | 23.75d | Robert [80%] | 16h |

| ID | WBS | Task | Duration | Start | Finish | Total slack | Resources | Work |
| --- | --- | --- | --- | --- | --- | --- | --- | --- |
| 78 | 3.4 | **M4** | 10d? | 2009-01-20 | 2009-02-04 | 16.25d |  | 176h |
| 79 | 3.4.1 | **Alert Actions (AA)** | 7.5d? | 2009-01-21 | 2009-01-30 | 18d |  | 48h |
| 80 | 3.4.1.1 | AA - Desktop Client | 3.75d? | 2009-01-21 | 2009-01-26 | 21.75d | Kurt [80%] | 24h |
| 81 | 3.4.1.2 | AA - Unit Testing | 3.75d? | 2009-01-27 | 2009-01-30 | 18d | Kurt [80%] | 24h |
| 82 | 3.4.2 | **Database Mirror Monitoring (DM)** | 5.71d? | 2009-01-22 | 2009-01-30 | 18.39d |  | 32h |
| 83 | 3.4.2.1 | DM - Enterprise Report | 5.71d? | 2009-01-22 | 2009-01-30 | 18.39d | Barry [70%] | 32h |
| 84 | 3.4.3 | **Reports 2.0 (R2)** | 10d? | 2009-01-20 | 2009-02-04 | 16.25d |  | 96h |
| 85 | 3.4.3.1 | R2 - Server Inventory Report | 3.75d? | 2009-01-23 | 2009-01-28 | 20d | Robert [80%] | 24h |
| 86 | 3.4.3.2 | R2 - Alert Summary Report | 3.75d? | 2009-01-28 | 2009-02-04 | 16.25d | Robert [80%] | 24h |
| 87 | 3.4.3.3 | R2 - Top Tables: Growth Report | 3.75d? | 2009-01-20 | 2009-01-26 | 22.5d | Vicky [80%] | 24h |
| 88 | 3.4.3.4 | R2 - Top Tables: Fragmentation Report | 3.75d? | 2009-01-26 | 2009-01-29 | 18.75d | Vicky [80%] | 24h |
| 89 | 3.5 | **M5** | 23.75d? | 2009-01-23 | 2009-02-26 | 0d |  | 312h |
| 90 | 3.5.1 | **Reports 2.0 (R2)** | 16.25d? | 2009-02-04 | 2009-02-26 | 0d |  | 72h |
| 91 | 3.5.1.1 | R2 - Active Alerts Report | 3.75d? | 2009-02-04 | 2009-02-17 | 7.5d | Robert [80%] | 24h |
| 92 | 3.5.1.2 | R2 - Deployment\Email Scheduling Wizard | 5d? | 2009-02-17 | 2009-02-24 | 2.5d | Robert [80%] | 32h |
| 93 | 3.5.1.3 | R2 - Unit Testing | 2.5d? | 2009-02-24 | 2009-02-26 | 0d | Robert [80%] | 16h |
| 94 | 3.5.2 | **Maintenance** | 20d? | 2009-01-23 | 2009-02-20 | 3.75d |  | 240h |
| 95 | 3.5.2.1 | Vicky | 12.5d? | 2009-01-30 | 2009-02-18 | 6.25d | Vicky [80%] | 80h |
| 96 | 3.5.2.2 | Kurt | 12.5d? | 2009-01-30 | 2009-02-19 | 5.5d | Kurt [80%] | 80h |
| 97 | 3.5.2.3 | Trent | 20d? | 2009-01-23 | 2009-02-20 | 3.75d | Trent [50%] | 80h |
