# SQLdm Fort Worth Schedule

Schedule from MS Project, 2009-07-07 to 2009-10-22.
BBS Technologies, Inc.

## Calendars

- Standard: Mon-Fri 08:00-12:00, 13:00-17:00; Sat-Sun off. Exceptions (off unless hours are given): 2009-08-03 (Personal Time Float), 2009-09-01 (Personal Leave Float), 2009-09-07 (Labor Day), 2009-10-01 (Personal Leave Float), 2009-10-16 12:00-19:00 (Oktoberfest).

## Resources

| Resource |
| --- |
| Barry |
| Kurt |
| Vicky |
| TBD |

## Schedule

| ID | WBS | Task | Duration | Start | Finish | Total slack | Constraint | Resources | Work |
| --- | --- | --- | --- | --- | --- | --- | --- | --- | --- |
| 1 | 1 | **Planning** | 25.67d? | 2009-07-07 | 2009-08-12 | 47.92d |  |  | 224h |
| 2 | 1.1 | SQL Cluster Alerts | 8.33d? | 2009-07-07 | 2009-07-17 | 59.38d | start no earlier than 2009-07-07 | Vicky [60%] | 40h |
| 3 | 1.2 | Replication Monitoring | 16.67d? | 2009-07-20 | 2009-08-12 | 47.92d | start no earlier than 2009-07-20 | Barry [60%] | 80h |
| 4 | 1.3 | Deadlock Alert | 8.33d? | 2009-07-17 | 2009-07-29 | 51.04d |  | Vicky [60%] | 40h |
| 5 | 1.4 | Hot Swap Batches | 5d? | 2009-07-29 | 2009-08-06 | 46.04d |  | Vicky [60%] | 24h |
| 6 | 1.5 | Installation/Upgrade | 5d? | 2009-07-07 | 2009-07-13 | 68.58d |  | TBD | 40h |
| 8 | 2 | **Development** | 51.92d? | 2009-08-06 | 2009-10-22 | 0d |  |  | 700h |
| 9 | 2.1 | **M1** | 8.5d? | 2009-08-06 | 2009-08-19 | 43.42d |  |  | 36h |
| 10 | 2.1.1 | **Hot Swappable Batches (HS)** | 2.5d? | 2009-08-06 | 2009-08-11 | 49.42d |  |  | 12h |
| 11 | 2.1.1.1 | HS - Collection Service | 0.83d? | 2009-08-06 | 2009-08-07 | 51.08d | start no earlier than 2009-08-06 | Vicky [60%] | 4h |
| 12 | 2.1.1.2 | HS - Header Utility | 0.83d? | 2009-08-07 | 2009-08-10 | 50.25d |  | Vicky [60%] | 4h |
| 13 | 2.1.1.3 | HS - Unit and Integration Testing | 0.83d? | 2009-08-10 | 2009-08-11 | 49.42d |  | Vicky [60%] | 4h |
| 14 | 2.1.2 | **Cluster Alerts (CA)** | 6d? | 2009-08-11 | 2009-08-19 | 43.42d |  |  | 24h |
| 15 | 2.1.2.1 | CA - R&D | 3.33d? | 2009-08-11 | 2009-08-14 | 46.08d |  | Vicky [60%] | 16h |
| 16 | 2.1.2.2 | CA - Unit and Integration Testing | 1.67d? | 2009-08-14 | 2009-08-19 | 43.42d |  | Vicky [60%] | 8h |
| 17 | 2.2 | **M2** | 20.19d? | 2009-08-12 | 2009-09-11 | 27.73d |  |  | 192h |
| 18 | 2.2.1 | **Planning Backlog** | 18.58d? | 2009-08-12 | 2009-09-10 | 29.33d |  |  | 104h |
| 19 | 2.2.1.1 | PR Review | 4.29d? | 2009-08-24 | 2009-08-28 | 30.42d | start no earlier than 2009-08-24 | Vicky [70%] | 24h |
| 20 | 2.2.1.2 | Custom Reports | 8.33d? | 2009-08-12 | 2009-08-24 | 39.58d | start no earlier than 2009-07-08 | Barry [60%] | 40h |
| 21 | 2.2.1.3 | Cluster Support | 6.25d? | 2009-08-31 | 2009-09-10 | 29.33d | start no earlier than 2009-07-31 | Kurt [80%] | 40h |
| 22 | 2.2.2 | **Replication Monitoring (RM)** | 8.33d? | 2009-08-25 | 2009-09-08 | 31.25d |  |  | 40h |
| 23 | 2.2.2.1 | Collection Service (RM) | 5d? | 2009-08-25 | 2009-08-31 | 34.58d |  | Barry [60%] | 24h |
| 24 | 2.2.2.2 | Management Service (RM) | 3.33d? | 2009-09-02 | 2009-09-08 | 31.25d |  | Barry [60%] | 16h |
| 25 | 2.2.3 | **Deadlock Alert (DL)** | 7.14d? | 2009-08-28 | 2009-09-10 | 24.71d |  |  | 40h |
| 26 | 2.2.3.1 | DL - R&D | 1.43d? | 2009-08-28 | 2009-08-31 | 34.87d |  | Vicky [70%] | 8h |
| 27 | 2.2.3.2 | DL - Collection Service | 5.71d? | 2009-08-31 | 2009-09-10 | 23.28d |  | Vicky [70%] | 32h |

| ID | WBS | Task | Duration | Start | Finish | Total slack | Constraint | Resources | Work |
| --- | --- | --- | --- | --- | --- | --- | --- | --- | --- |
| 28 | 2.2.4 | **Previous Milestone PRs** | 1.43d? | 2009-09-10 | 2009-09-11 | 27.73d |  |  | 8h |
| 29 | 2.2.4.1 | Vicky | 1.43d? | 2009-09-10 | 2009-09-11 | 27.73d |  | Vicky [70%] | 8h |
| 30 | 2.3 | **M3** | 13.52d? | 2009-09-08 | 2009-09-25 | 17.73d |  |  | 184h |
| 31 | 2.3.1 | **Replication Monitoring (RM)** | 12.5d? | 2009-09-08 | 2009-09-24 | 18.75d |  |  | 80h |
| 32 | 2.3.1.1 | Repository (RM) | 3.75d? | 2009-09-08 | 2009-09-14 | 27.5d |  | Barry [80%] | 24h |
| 33 | 2.3.1.2 | Desktop Client (RM) | 6.25d? | 2009-09-14 | 2009-09-22 | 21.25d |  | Barry [80%] | 40h |
| 34 | 2.3.1.3 | Unit and Integration Testing | 2.5d? | 2009-09-22 | 2009-09-24 | 18.75d |  | Barry [80%] | 16h |
| 35 | 2.3.2 | **Deadlock Alert (DL)** | 7.5d? | 2009-09-10 | 2009-09-21 | 21.83d |  |  | 80h |
| 36 | 2.3.2.1 | DL - Management Service | 1.43d? | 2009-09-11 | 2009-09-15 | 26.3d |  | Vicky [70%] | 8h |
| 37 | 2.3.2.2 | DL - Repository | 1.43d? | 2009-09-15 | 2009-09-16 | 24.87d |  | Vicky [70%] | 8h |
| 38 | 2.3.2.3 | DL - Unit and Integration Testing | 2.86d? | 2009-09-16 | 2009-09-21 | 22.01d | start no earlier than 2009-09-10 | Vicky [70%] | 16h |
| 39 | 2.3.2.4 | DL - Desktop Client | 6.25d? | 2009-09-10 | 2009-09-18 | 23.08d |  | Kurt [80%] | 40h |
| 40 | 2.3.2.5 | DL - Unit and Integration Testing | 1.25d? | 2009-09-18 | 2009-09-21 | 21.83d | start no earlier than 2009-09-10 | Kurt [80%] | 8h |
| 41 | 2.3.3 | **Previous Milestone PRs** | 1.43d? | 2009-09-21 | 2009-09-22 | 20.58d |  |  | 8h |
| 42 | 2.3.3.1 | Vicky | 1.43d? | 2009-09-21 | 2009-09-22 | 20.58d |  | Vicky [70%] | 8h |
| 43 | 2.3.4 | **Feature PRs** | 2.86d? | 2009-09-22 | 2009-09-25 | 17.73d |  |  | 16h |
| 44 | 2.3.4.1 | Vicky | 2.86d? | 2009-09-22 | 2009-09-25 | 17.73d |  | Vicky [70%] | 16h |
| 45 | 2.4 | **M4** | 8.25d? | 2009-09-21 | 2009-10-02 | 13.58d |  |  | 40h |
| 46 | 2.4.1 | Cluster Support (CS) Swag | 6.25d? | 2009-09-21 | 2009-10-02 | 13.58d |  | Kurt [80%] | 40h |
| 47 | 2.5 | **M5** | 12.5d? | 2009-09-24 | 2009-10-14 | 6.25d |  |  | 128h |
| 48 | 2.5.1 | **Custom Reports (CR)** | 10d? | 2009-09-24 | 2009-10-09 | 8.75d |  |  | 64h |
| 49 | 2.5.1.1 | CR - Report parsing and XML | 3.75d? | 2009-09-24 | 2009-09-30 | 15d |  | Barry [80%] | 24h |
| 50 | 2.5.1.2 | CR - Custom Report Wizard | 2.5d? | 2009-09-30 | 2009-10-06 | 12.5d |  | Barry [80%] | 16h |
| 51 | 2.5.1.3 | CR - Custom Report View | 2.5d? | 2009-10-06 | 2009-10-08 | 10d |  | Barry [80%] | 16h |
| 52 | 2.5.1.4 | CR - Unit and Integration Testing | 1.25d? | 2009-10-08 | 2009-10-09 | 8.75d |  | Barry [80%] | 8h |

| ID | WBS | Task | Duration | Start | Finish | Total slack | Resources | Work |
| --- | --- | --- | --- | --- | --- | --- | --- | --- |
| 53 | 2.5.2 | **Previous Milestone PRs** | 11.48d? | 2009-09-25 | 2009-10-14 | 6.25d |  | 32h |
| 54 | 2.5.2.1 | Barry | 2.5d? | 2009-10-09 | 2009-10-14 | 6.25d | Barry [80%] | 16h |
| 55 | 2.5.2.2 | Vicky | 1.43d? | 2009-09-25 | 2009-09-29 | 16.3d | Vicky [70%] | 8h |
| 56 | 2.5.2.3 | Kurt | 1.25d? | 2009-10-05 | 2009-10-06 | 12.33d | Kurt [80%] | 8h |
| 57 | 2.5.3 | **Feature PRs** | 6.46d? | 2009-09-29 | 2009-10-08 | 9.83d |  | 32h |
| 58 | 2.5.3.1 | Vicky | 2.86d? | 2009-09-29 | 2009-10-05 | 13.44d | Vicky [70%] | 16h |
| 59 | 2.5.3.2 | Kurt | 2.5d? | 2009-10-06 | 2009-10-08 | 9.83d | Kurt [80%] | 16h |
| 60 | 2.6 | **PFC1 (Draft)** | 13.44d? | 2009-10-05 | 2009-10-22 | 0d |  | 120h |
| 61 | 2.6.1 | **Previous Milestone PRs** | 8.44d? | 2009-10-05 | 2009-10-15 | 5d |  | 24h |
| 62 | 2.6.1.1 | Barry | 1.25d? | 2009-10-14 | 2009-10-15 | 5d | Barry [80%] | 8h |
| 63 | 2.6.1.2 | Kurt | 1.25d? | 2009-10-08 | 2009-10-09 | 8.58d | Kurt [80%] | 8h |
| 64 | 2.6.1.3 | Vicky | 1.43d? | 2009-10-05 | 2009-10-06 | 12.01d | Vicky [70%] | 8h |
| 65 | 2.6.2 | **Feature PRs** | 2.5d? | 2009-10-15 | 2009-10-20 | 2.5d |  | 16h |
| 66 | 2.6.2.1 | Barry | 2.5d? | 2009-10-15 | 2009-10-20 | 2.5d | Barry [80%] | 16h |
| 67 | 2.6.3 | **Maintenance** | 12.01d? | 2009-10-06 | 2009-10-22 | 0d |  | 80h |
| 68 | 2.6.3.1 | Barry | 2.5d | 2009-10-20 | 2009-10-22 | 0d | Barry [80%] | 16h |
| 69 | 2.6.3.2 | Kurt | 5d? | 2009-10-12 | 2009-10-19 | 3.58d | Kurt [80%] | 32h |
| 70 | 2.6.3.3 | Vicky | 5.71d | 2009-10-06 | 2009-10-22 | 0.42d | Vicky [70%] | 32h |
