Schedule from MS Project, 2006-11-06 to 2007-05-18, A marks actual dates.

## Calendars

- Standard: Mon-Fri 08:00-12:00, 13:00-17:00; Sat-Sun off. Exceptions (off unless hours are given): 2006-11-23 to 2006-11-24, 2006-12-22, 2006-12-25, 2007-01-01, 2007-04-06.

## Resources

| Resource |
| --- |
| Trent Miskelly |
| Vicky Sherrouse |
| Kurt Goolsbee |
| Mark Lauitsen |
| Mike White |
| Mike O'Neal |

## Schedule

| ID | WBS | Task | Type | Duration | Start | Finish | Complete | Remaining | Total slack | Resources | Work | Actual work |
| --- | --- | --- | --- | --- | --- | --- | --- | --- | --- | --- | --- | --- |
| 1 | 1 | **Project Houston Development** |  | 133.53d? | 2006-11-06 A | 2007-05-18 | 78% | 29.06d? | 0d |  | 4525.7h | 3549.1h |
| 2 | 1.1 | **M1 - Service Infrastrucutre I** |  | 23d? | 2006-11-06 A | 2006-12-08 A | 100% |  |  |  | 452h | 452h |
| 3 | 1.1.1 | 4.6 Work |  | 10d? | 2006-11-06 A | 2006-11-17 A | 100% |  |  | Vicky Sherrouse | 80h | 80h |
| 4 | 1.1.2 | **Customer Support PRs** |  | 2d? | 2006-11-06 A | 2006-11-07 A | 100% |  |  |  | 16h | 16h |
| 5 | 1.1.2.1 | Trent |  | 2d? | 2006-11-06 A | 2006-11-07 A | 100% |  |  | Trent Miskelly | 16h | 16h |
| 6 | 1.1.2.2 | Mark | milestone | 0d? | 2006-11-06 A | 2006-11-06 A | 100% |  |  | Mark Lauitsen |  |  |
| 7 | 1.1.3 | **Startup** |  | 5d? | 2006-11-06 A | 2006-11-10 A | 100% |  |  |  | 80h | 80h |
| 8 | 1.1.3.1 | Kurt |  | 5d? | 2006-11-06 A | 2006-11-10 A | 100% |  |  | Kurt Goolsbee | 40h | 40h |
| 9 | 1.1.3.2 | Mark |  | 5d? | 2006-11-06 A | 2006-11-10 A | 100% |  |  | Mark Lauitsen | 40h | 40h |
| 10 | 1.1.4 | **Collection Service** |  | 12d? | 2006-11-13 A | 2006-11-30 A | 100% |  |  |  | 48h | 48h |
| 11 | 1.1.4.1 | **Scheduled Snapshot Manager** |  | 12d? | 2006-11-13 A | 2006-11-30 A | 100% |  |  |  | 48h | 48h |
| 12 | 1.1.4.1.1 | Probe scheduler |  | 2d? | 2006-11-13 A | 2006-11-14 A | 100% |  |  | Kurt Goolsbee | 16h | 16h |
| 13 | 1.1.4.1.2 | Probe - Server Overview |  | 2d? | 2006-11-27 A | 2006-11-28 A | 100% |  |  | Vicky Sherrouse | 16h | 16h |
| 14 | 1.1.4.1.3 | Probe - Support Services Status |  | 2d? | 2006-11-29 A | 2006-11-30 A | 100% |  |  | Vicky Sherrouse | 16h | 16h |
| 15 | 1.1.5 | **Management Service** |  | 2d? | 2006-12-01 A | 2006-12-04 A | 100% |  |  |  | 16h | 16h |
| 16 | 1.1.5.1 | **Scheduled Snapshot Manager** |  | 2d? | 2006-12-01 A | 2006-12-04 A | 100% |  |  |  | 16h | 16h |
| 17 | 1.1.5.1.1 | Store snapshot metrics |  | 2d? | 2006-12-01 A | 2006-12-04 A | 100% |  |  | Vicky Sherrouse | 16h | 16h |
| 18 | 1.1.6 | **Desktop Client** |  | 13d? | 2006-11-08 A | 2006-11-28 A | 100% |  |  |  | 160h | 160h |
| 19 | 1.1.6.1 | Specification Review |  | 1d? | 2006-11-08 A | 2006-11-08 A | 100% |  |  | Trent Miskelly | 8h | 8h |
| 20 | 1.1.6.2 | Finalize Specification |  | 1d? | 2006-11-09 A | 2006-11-09 A | 100% |  |  | Trent Miskelly | 8h | 8h |
| 21 | 1.1.6.3 | **Prototype** |  | 8d? | 2006-11-10 A | 2006-11-21 A | 100% |  |  |  | 64h | 64h |
| 22 | 1.1.6.3.1 | SQLdm Today |  | 3d? | 2006-11-10 A | 2006-11-14 A | 100% |  |  | Trent Miskelly | 24h | 24h |
| 23 | 1.1.6.3.2 | Server Monitor |  | 3d? | 2006-11-15 A | 2006-11-17 A | 100% |  |  | Trent Miskelly | 24h | 24h |
| 24 | 1.1.6.3.3 | Server group view |  | 2d? | 2006-11-20 A | 2006-11-21 A | 100% |  |  | Trent Miskelly | 16h | 16h |

| ID | WBS | Task | Type | Duration | Start | Finish | Complete | Resources | Work | Actual work |
| --- | --- | --- | --- | --- | --- | --- | --- | --- | --- | --- |
| 25 | 1.1.6.4 | **Dialogs** |  | 10d? | 2006-11-13 A | 2006-11-28 A | 100% |  | 80h | 80h |
| 26 | 1.1.6.4.1 | Upgrade Specification |  | 5d? | 2006-11-13 A | 2006-11-17 A | 100% | Mark Lauitsen | 40h | 40h |
| 27 | 1.1.6.4.2 | Upgrade Wizard |  | 5d? | 2006-11-20 A | 2006-11-28 A | 100% | Mark Lauitsen | 40h | 40h |
| 28 | 1.1.7 | **Database** |  | 2d? | 2006-12-05 A | 2006-12-06 A | 100% |  | 16h | 16h |
| 29 | 1.1.7.1 | Snapshot schema support |  | 1d? | 2006-12-05 A | 2006-12-05 A | 100% | Vicky Sherrouse | 8h | 8h |
| 30 | 1.1.7.2 | Snapshot stored procedures |  | 1d? | 2006-12-06 A | 2006-12-06 A | 100% | Vicky Sherrouse | 8h | 8h |
| 31 | 1.1.8 | **Unit Testing** |  | 23d? | 2006-11-06 A | 2006-12-08 A | 100% |  | 36h | 36h |
| 32 | 1.1.8.1 | Trent | milestone | 0d? | 2006-11-06 A | 2006-11-06 A | 100% | Trent Miskelly |  |  |
| 33 | 1.1.8.2 | Vicky |  | 2d? | 2006-12-07 A | 2006-12-08 A | 100% | Vicky Sherrouse | 16h | 16h |
| 34 | 1.1.8.3 | Kurt |  | 0.5d? | 2006-11-15 A | 2006-11-15 A | 100% | Kurt Goolsbee | 4h | 4h |
| 35 | 1.1.8.4 | Mark |  | 2d? | 2006-11-29 A | 2006-11-30 A | 100% | Mark Lauitsen | 16h | 16h |
| 36 | 1.2 | **M2 - UI Framework/Service Infrastructure II** |  | 36d? | 2006-11-06 A | 2006-12-30 A | 100% |  | 336h | 336h |
| 37 | 1.2.1 | **Customer Support PRs** |  | 6d? | 2006-11-22 A | 2006-12-01 A | 100% |  | 24h | 24h |
| 38 | 1.2.1.1 | Trent |  | 2d? | 2006-11-22 A | 2006-11-27 A | 100% | Trent Miskelly | 16h | 16h |
| 39 | 1.2.1.2 | Mark |  | 1d? | 2006-12-01 A | 2006-12-01 A | 100% | Mark Lauitsen | 8h | 8h |
| 40 | 1.2.2 | **Collection Service** |  | 19.5d? | 2006-11-15 A | 2006-12-14 A | 100% |  | 88h | 88h |
| 41 | 1.2.2.1 | **User Interface** |  | 1d? | 2006-11-15 A | 2006-11-16 A | 100% |  | 8h | 8h |
| 42 | 1.2.2.1.1 | Collection Service Configuration Dialog |  | 1d? | 2006-11-15 A | 2006-11-16 A | 100% | Kurt Goolsbee | 8h | 8h |
| 43 | 1.2.2.2 | **Configuration Manager** |  | 5d? | 2006-11-16 A | 2006-11-27 A | 100% |  | 40h | 40h |
| 44 | 1.2.2.2.1 | Request workload from Management Service |  | 3d? | 2006-11-16 A | 2006-11-21 A | 100% | Kurt Goolsbee | 24h | 24h |
| 45 | 1.2.2.2.2 | Process server configuration changes |  | 2d? | 2006-11-21 A | 2006-11-27 A | 100% | Kurt Goolsbee | 16h | 16h |
| 46 | 1.2.2.3 | **Scheduled Snapshot Manager** |  | 4d? | 2006-12-11 A | 2006-12-14 A | 100% |  | 32h | 32h |
| 47 | 1.2.2.3.1 | Probe - OS Statistics |  | 2d? | 2006-12-11 A | 2006-12-12 A | 100% | Vicky Sherrouse | 16h | 16h |
| 48 | 1.2.2.3.2 | Probe - Database Statistics |  | 2d? | 2006-12-13 A | 2006-12-14 A | 100% | Vicky Sherrouse | 16h | 16h |

| ID | WBS | Task | Duration | Start | Finish | Complete | Resources | Work | Actual work |
| --- | --- | --- | --- | --- | --- | --- | --- | --- | --- |
| 49 | 1.2.2.4 | **Operational Status Manager** | 1d? | 2006-11-27 A | 2006-11-28 A | 100% |  | 8h | 8h |
| 50 | 1.2.2.4.1 | Send heartbeat to Management Service | 1d? | 2006-11-27 A | 2006-11-28 A | 100% | Kurt Goolsbee | 8h | 8h |
| 51 | 1.2.3 | **Management Service** | 16.5d? | 2006-11-28 A | 2006-12-20 A | 100% |  | 60h | 60h |
| 52 | 1.2.3.1 | **User Interface** | 1d? | 2006-11-28 A | 2006-11-29 A | 100% |  | 8h | 8h |
| 53 | 1.2.3.1.1 | Management Service Configuration Dialog | 1d? | 2006-11-28 A | 2006-11-29 A | 100% | Kurt Goolsbee | 8h | 8h |
| 54 | 1.2.3.2 | **Configuration Manager** | 1d? | 2006-11-29 A | 2006-11-30 A | 100% |  | 8h | 8h |
| 55 | 1.2.3.2.1 | Process system configuration changes | 0.5d? | 2006-11-29 A | 2006-11-29 A | 100% | Kurt Goolsbee | 4h | 4h |
| 56 | 1.2.3.2.2 | Process server configuration changes | 0.5d? | 2006-11-30 A | 2006-11-30 A | 100% | Kurt Goolsbee | 4h | 4h |
| 57 | 1.2.3.3 | **Scheduled Snapshot Manager** | 2d? | 2006-12-19 A | 2006-12-20 A | 100% |  | 16h | 16h |
| 58 | 1.2.3.3.1 | Store snapshot metrics | 2d? | 2006-12-19 A | 2006-12-20 A | 100% | Vicky Sherrouse | 16h | 16h |
| 59 | 1.2.3.4 | **Operational Status Manager** | 0.5d? | 2006-11-30 A | 2006-11-30 A | 100% |  | 4h | 4h |
| 60 | 1.2.3.4.1 | Process heartbeats | 0.5d? | 2006-11-30 A | 2006-11-30 A | 100% | Kurt Goolsbee | 4h | 4h |
| 61 | 1.2.3.5 | License Manager | 3d? | 2006-12-04 A | 2006-12-06 A | 100% | Mark Lauitsen | 24h | 24h |
| 62 | 1.2.4 | **Desktop Client** | 9d? | 2006-11-28 A | 2006-12-08 A | 100% |  | 64h | 64h |
| 63 | 1.2.4.1 | **Framework** | 6d? | 2006-11-28 A | 2006-12-05 A | 100% |  | 48h | 48h |
| 64 | 1.2.4.1.1 | Window Layout | 1d? | 2006-11-28 A | 2006-11-28 A | 100% | Trent Miskelly | 8h | 8h |
| 65 | 1.2.4.1.2 | Main Menu | 0.5d? | 2006-11-29 A | 2006-11-29 A | 100% | Trent Miskelly | 4h | 4h |
| 66 | 1.2.4.1.3 | Navigation Pane | 0.5d? | 2006-11-29 A | 2006-11-29 A | 100% | Trent Miskelly | 4h | 4h |
| 67 | 1.2.4.1.4 | Task Pane | 0.5d? | 2006-11-30 A | 2006-11-30 A | 100% | Trent Miskelly | 4h | 4h |
| 68 | 1.2.4.1.5 | View Manager | 0.5d? | 2006-11-30 A | 2006-11-30 A | 100% | Trent Miskelly | 4h | 4h |
| 69 | 1.2.4.1.6 | Server Tabs | 1d? | 2006-12-01 A | 2006-12-01 A | 100% | Trent Miskelly | 8h | 8h |
| 70 | 1.2.4.1.7 | Monitored Object Model | 2d? | 2006-12-04 A | 2006-12-05 A | 100% | Trent Miskelly | 16h | 16h |
| 71 | 1.2.4.2 | **Dialogs** | 2d? | 2006-12-07 A | 2006-12-08 A | 100% |  | 16h | 16h |
| 72 | 1.2.4.2.1 | Manage Licenses Dialog | 2d? | 2006-12-07 A | 2006-12-08 A | 100% | Mark Lauitsen | 16h | 16h |

| ID | WBS | Task | Type | Duration | Start | Finish | Complete | Resources | Work | Actual work |
| --- | --- | --- | --- | --- | --- | --- | --- | --- | --- | --- |
| 73 | 1.2.5 | **Database** |  | 1d? | 2006-12-21 A | 2006-12-21 A | 100% |  | 8h | 8h |
| 74 | 1.2.5.1 | Snapshot schema support |  | 0.5d? | 2006-12-21 A | 2006-12-21 A | 100% | Vicky Sherrouse | 4h | 4h |
| 75 | 1.2.5.2 | Snapshot stored procedures |  | 0.5d? | 2006-12-21 A | 2006-12-21 A | 100% | Vicky Sherrouse | 4h | 4h |
| 76 | 1.2.6 | **Unit Testing** |  | 18d? | 2006-12-01 A | 2006-12-28 A | 100% |  | 56h | 56h |
| 77 | 1.2.6.1 | Trent |  | 2d? | 2006-12-06 A | 2006-12-07 A | 100% | Trent Miskelly | 16h | 16h |
| 78 | 1.2.6.2 | Vicky |  | 2d? | 2006-12-27 A | 2006-12-28 A | 100% | Vicky Sherrouse | 16h | 16h |
| 79 | 1.2.6.3 | Kurt |  | 2d? | 2006-12-01 A | 2006-12-04 A | 100% | Kurt Goolsbee | 16h | 16h |
| 80 | 1.2.6.4 | Mark |  | 1d? | 2006-12-11 A | 2006-12-11 A | 100% | Mark Lauitsen | 8h | 8h |
| 81 | 1.2.7 | **Previous Milestone PRs** |  | 36d? | 2006-11-06 A | 2006-12-30 A | 100% |  | 36h | 36h |
| 82 | 1.2.7.1 | Trent | milestone | 0d? | 2006-11-06 A | 2006-11-06 A | 100% | Trent Miskelly |  |  |
| 83 | 1.2.7.2 | Vicky |  | 2d? | 2006-12-29 A | 2006-12-30 A | 100% | Vicky Sherrouse | 16h | 16h |
| 84 | 1.2.7.3 | Kurt |  | 0.5d? | 2006-12-05 A | 2006-12-05 A | 100% | Kurt Goolsbee | 4h | 4h |
| 85 | 1.2.7.4 | Mark |  | 2d? | 2006-12-12 A | 2006-12-13 A | 100% | Mark Lauitsen | 16h | 16h |
| 86 | 1.3 | **M3 - Manage Servers** |  | 29.62d? | 2006-12-05 A | 2007-01-18 A | 100% |  | 481h | 481h |
| 87 | 1.3.1 | **Customer Support PRs** |  | 4.5d? | 2006-12-08 A | 2006-12-14 A | 100% |  | 12h | 12h |
| 88 | 1.3.1.1 | Trent |  | 1d? | 2006-12-08 A | 2006-12-08 A | 100% | Trent Miskelly | 8h | 8h |
| 89 | 1.3.1.2 | Mark |  | 0.5d? | 2006-12-14 A | 2006-12-14 A | 100% | Mark Lauitsen | 4h | 4h |
| 90 | 1.3.2 | **Collection Service** |  | 22.5d? | 2006-12-05 A | 2007-01-09 A | 100% |  | 80h | 80h |
| 91 | 1.3.2.1 | **Scheduled Snapshot Manager** |  | 22.5d? | 2006-12-05 A | 2007-01-09 A | 100% |  | 80h | 80h |
| 92 | 1.3.2.1.1 | Probe - Processes (Blocking, Resource Usage) |  | 2d? | 2007-01-02 A | 2007-01-03 A | 100% | Vicky Sherrouse | 16h | 16h |
| 93 | 1.3.2.1.2 | Probe - Scheduled Jobs (Long Running, End Abnormally) |  | 2d? | 2007-01-04 A | 2007-01-05 A | 100% | Vicky Sherrouse | 16h | 16h |
| 94 | 1.3.2.1.3 | Probe - Query Monitor Trace |  | 2d? | 2007-01-06 A | 2007-01-09 A | 100% | Vicky Sherrouse | 16h | 16h |
| 95 | 1.3.2.1.4 | Raise events based on metric threshold violations or state changes |  | 3d? | 2006-12-05 A | 2006-12-08 A | 100% | Kurt Goolsbee | 24h | 24h |
| 96 | 1.3.2.1.5 | Instrumentation |  | 1d? | 2006-12-08 A | 2006-12-11 A | 100% | Kurt Goolsbee | 8h | 8h |

| ID | WBS | Task | Duration | Start | Finish | Complete | Constraint | Resources | Work | Actual work |
| --- | --- | --- | --- | --- | --- | --- | --- | --- | --- | --- |
| 97 | 1.3.3 | **Management Service** | 8d? | 2006-12-11 A | 2006-12-21 A | 100% |  |  | 64h | 64h |
| 98 | 1.3.3.1 | **Scheduled Snapshot Manager** | 8d? | 2006-12-11 A | 2006-12-21 A | 100% |  |  | 64h | 64h |
| 99 | 1.3.3.1.1 | Store snapshot metrics | 2d? | 2006-12-11 A | 2006-12-13 A | 100% |  | Kurt Goolsbee | 16h | 16h |
| 100 | 1.3.3.1.2 | Instrumentation | 1d? | 2006-12-13 A | 2006-12-14 A | 100% |  | Kurt Goolsbee | 8h | 8h |
| 101 | 1.3.3.1.3 | Manage object state table | 5d? | 2006-12-14 A | 2006-12-21 A | 100% |  | Kurt Goolsbee | 40h | 40h |
| 102 | 1.3.4 | **Desktop Client** | 19.62d? | 2006-12-11 A | 2007-01-10 A | 100% |  |  | 141h | 141h |
| 103 | 1.3.4.1 | **Views** | 6.5d? | 2006-12-11 A | 2006-12-19 A | 100% |  |  | 48h | 48h |
| 104 | 1.3.4.1.1 | **Servers** | 3d? | 2006-12-11 A | 2006-12-13 A | 100% |  |  | 24h | 24h |
| 105 | 1.3.4.1.1.1 | Servers / Navigation Pane | 2d? | 2006-12-11 A | 2006-12-12 A | 100% |  | Trent Miskelly | 16h | 16h |
| 106 | 1.3.4.1.1.2 | My View / Details | 1d? | 2006-12-13 A | 2006-12-13 A | 100% |  | Trent Miskelly | 8h | 8h |
| 107 | 1.3.4.1.2 | **Reports** | 3d? | 2006-12-14 A | 2006-12-19 A | 100% |  |  | 24h | 24h |
| 108 | 1.3.4.1.2.1 | UI Prototype | 3d? | 2006-12-14 A | 2006-12-19 A | 100% |  | Mark Lauitsen | 24h | 24h |
| 109 | 1.3.4.2 | **Dialogs** | 4.62d? | 2006-12-14 A | 2006-12-20 A | 100% |  |  | 37h | 37h |
| 110 | 1.3.4.2.1 | Splash Dialog | 0.5d? | 2006-12-14 A | 2006-12-14 A | 100% |  | Trent Miskelly | 4h | 4h |
| 111 | 1.3.4.2.2 | Connect to SQLdm Database Dialog | 1d? | 2006-12-14 A | 2006-12-15 A | 100% |  | Trent Miskelly | 8h | 8h |
| 112 | 1.3.4.2.3 | Add Server Dialog (Single and Multiple) | 2d? | 2006-12-15 A | 2006-12-19 A | 100% |  | Trent Miskelly | 16h | 16h |
| 113 | 1.3.4.2.4 | Server Properties Dialog | 1d? | 2006-12-19 A | 2006-12-20 A | 100% |  | Trent Miskelly | 8h | 8h |
| 114 | 1.3.4.2.5 | About SQLdm Dialog | 0.12d? | 2006-12-20 A | 2006-12-20 A | 100% |  | Trent Miskelly | 1h | 1h |
| 115 | 1.3.4.3 | Delay Task | 7d? | 2006-12-20 A | 2007-01-10 A | 100% |  | Trent Miskelly | 56h | 56h |
| 116 | 1.3.5 | **Database** | 13.12d? | 2006-12-21 A | 2007-01-12 A | 100% |  |  | 24h | 24h |
| 117 | 1.3.5.1 | Snapshot schema support | 0.5d? | 2006-12-21 A | 2006-12-21 A | 100% |  | Kurt Goolsbee | 4h | 4h |
| 118 | 1.3.5.2 | Snapshot stored procedures | 0.5d? | 2006-12-28 A | 2006-12-28 A | 100% |  | Kurt Goolsbee | 4h | 4h |
| 119 | 1.3.5.3 | View-related stored procedures | 2d? | 2007-01-10 A | 2007-01-12 A | 100% |  | Trent Miskelly | 16h | 16h |
| 120 | 1.3.6 | **Install** | 5d? | 2006-12-05 A | 2006-12-11 A | 100% | start no earlier than 2006-12-05 |  | 40h | 40h |
| 121 | 1.3.6.1 | Basic Installation (single machine only) | 5d? | 2006-12-05 A | 2006-12-11 A | 100% |  | Mike White | 40h | 40h |

| ID | WBS | Task | Duration | Start | Finish | Complete | Resources | Work | Actual work |
| --- | --- | --- | --- | --- | --- | --- | --- | --- | --- |
| 122 | 1.3.7 | **Unit Testing** | 17.12d? | 2006-12-19 A | 2007-01-16 A | 100% |  | 64h | 64h |
| 123 | 1.3.7.1 | Trent | 2d? | 2007-01-12 A | 2007-01-16 A | 100% | Trent Miskelly | 16h | 16h |
| 124 | 1.3.7.2 | Vicky | 2d? | 2007-01-10 A | 2007-01-11 A | 100% | Vicky Sherrouse | 16h | 16h |
| 125 | 1.3.7.3 | Kurt | 2d? | 2006-12-28 A | 2007-01-02 A | 100% | Kurt Goolsbee | 16h | 16h |
| 126 | 1.3.7.4 | Mark | 2d? | 2006-12-19 A | 2006-12-21 A | 100% | Mark Lauitsen | 16h | 16h |
| 127 | 1.3.8 | **Previous Milestone PRs** | 17.12d? | 2006-12-21 A | 2007-01-18 A | 100% |  | 56h | 56h |
| 128 | 1.3.8.1 | Trent | 2d? | 2007-01-16 A | 2007-01-18 A | 100% | Trent Miskelly | 16h | 16h |
| 129 | 1.3.8.2 | Vicky | 2d? | 2007-01-12 A | 2007-01-13 A | 100% | Vicky Sherrouse | 16h | 16h |
| 130 | 1.3.8.3 | Kurt | 2d? | 2007-01-02 A | 2007-01-04 A | 100% | Kurt Goolsbee | 16h | 16h |
| 131 | 1.3.8.4 | Mark | 1d? | 2006-12-21 A | 2007-01-02 A | 100% | Mark Lauitsen | 8h | 8h |
| 132 | 1.4 | **M4 - Today and Server Monitor + Install (32 bit)** | 63.5d? | 2006-11-06 A | 2007-02-08 A | 100% |  | 586h | 586h |
| 133 | 1.4.1 | **Customer Support PRs** | 14.12d? | 2007-01-02 A | 2007-01-22 A | 100% |  | 24h | 24h |
| 134 | 1.4.1.1 | Trent | 2d? | 2007-01-18 A | 2007-01-22 A | 100% | Trent Miskelly | 16h | 16h |
| 135 | 1.4.1.2 | Mark | 1d? | 2007-01-02 A | 2007-01-03 A | 100% | Mark Lauitsen | 8h | 8h |
| 136 | 1.4.2 | **Collection Service** | 7d? | 2007-01-16 A | 2007-01-24 A | 100% |  | 56h | 56h |
| 137 | 1.4.2.1 | **Scheduled Snapshot Manager** | 4d? | 2007-01-16 A | 2007-01-20 A | 100% |  | 36h | 36h |
| 138 | 1.4.2.1.1 | Probe - Overview > Monitor | 1d? | 2007-01-16 A | 2007-01-16 A | 100% | Vicky Sherrouse | 8h | 8h |
| 139 | 1.4.2.1.2 | Probe - Overview > Details | 0.5d? | 2007-01-17 A | 2007-01-17 A | 100% | Vicky Sherrouse | 4h | 4h |
| 140 | 1.4.2.1.3 | Probe - Reorganization Statistics | 2d? | 2007-01-17 A | 2007-01-19 A | 100% | Vicky Sherrouse | 16h | 16h |
| 141 | 1.4.2.1.4 | Probe - Growth Statistics | 1d? | 2007-01-19 A | 2007-01-20 A | 100% | Vicky Sherrouse | 8h | 8h |
| 142 | 1.4.2.2 | **Events** | 1.5d? | 2007-01-20 A | 2007-01-23 A | 100% |  | 8h | 8h |
| 143 | 1.4.2.2.1 | Event processing on the collection service | 1d? | 2007-01-20 A | 2007-01-23 A | 100% | Vicky Sherrouse | 8h | 8h |
| 144 | 1.4.2.3 | **Trace Processing** | 1.5d? | 2007-01-23 A | 2007-01-24 A | 100% |  | 12h | 12h |
| 145 | 1.4.2.3.1 | Stop trace when server is removed | 0.5d? | 2007-01-23 A | 2007-01-23 A | 100% | Vicky Sherrouse | 4h | 4h |
| 146 | 1.4.2.3.2 | Trace configuration change processing | 1d? | 2007-01-24 A | 2007-01-24 A | 100% | Vicky Sherrouse | 8h | 8h |

| ID | WBS | Task | Duration | Start | Finish | Complete | Resources | Work | Actual work |
| --- | --- | --- | --- | --- | --- | --- | --- | --- | --- |
| 147 | 1.4.3 | **Management Service** | 15.5d? | 2007-01-04 A | 2007-01-25 A | 100% |  | 72h | 72h |
| 148 | 1.4.3.1 | **Scheduled Snapshot Manager** | 1d? | 2007-01-25 A | 2007-01-25 A | 100% |  | 8h | 8h |
| 149 | 1.4.3.1.1 | Store snapshot metrics | 1d? | 2007-01-25 A | 2007-01-25 A | 100% | Vicky Sherrouse | 8h | 8h |
| 150 | 1.4.3.2 | **Notification Manager** | 6d? | 2007-01-04 A | 2007-01-12 A | 100% |  | 48h | 48h |
| 151 | 1.4.3.2.1 | Implement notification rule logic | 3d? | 2007-01-04 A | 2007-01-09 A | 100% | Kurt Goolsbee | 24h | 24h |
| 152 | 1.4.3.2.2 | Process snapshot against notification rules | 3d? | 2007-01-09 A | 2007-01-12 A | 100% | Kurt Goolsbee | 24h | 24h |
| 153 | 1.4.3.3 | **Operational Status Manager** | 2d? | 2007-01-12 A | 2007-01-16 A | 100% |  | 16h | 16h |
| 154 | 1.4.3.3.1 | Generate notifications based on missed heartbeats | 2d? | 2007-01-12 A | 2007-01-16 A | 100% | Kurt Goolsbee | 16h | 16h |
| 155 | 1.4.4 | **Desktop Client** | 26d? | 2007-01-03 A | 2007-02-08 A | 100% |  | 274h | 274h |
| 156 | 1.4.4.1 | **Reports** | 26d? | 2007-01-03 A | 2007-02-08 A | 100% |  | 208h | 208h |
| 157 | 1.4.4.1.1 | Reports / Investigation | 10.5d? | 2007-01-03 A | 2007-01-17 A | 100% | Mark Lauitsen | 84h | 84h |
| 158 | 1.4.4.1.2 | Reports / Spec | 10.5d? | 2007-01-18 A | 2007-02-01 A | 100% | Mark Lauitsen | 84h | 84h |
| 159 | 1.4.4.1.3 | Reports / Infrastructure (1) | 5d? | 2007-02-01 A | 2007-02-08 A | 100% | Mark Lauitsen | 40h | 40h |
| 160 | 1.4.4.2 | **Views** | 6d? | 2007-01-22 A | 2007-01-30 A | 100% |  | 48h | 48h |
| 161 | 1.4.4.2.1 | **Servers** | 6d? | 2007-01-22 A | 2007-01-30 A | 100% |  | 48h | 48h |
| 162 | 1.4.4.2.1.1 | My View / Mini-Monitors | 2d? | 2007-01-22 A | 2007-01-24 A | 100% | Trent Miskelly | 16h | 16h |
| 163 | 1.4.4.2.1.2 | SQLdm Today | 1d? | 2007-01-24 A | 2007-01-25 A | 100% | Trent Miskelly | 8h | 8h |
| 164 | 1.4.4.2.1.3 | Server > Overview / Monitor | 3d? | 2007-01-25 A | 2007-01-30 A | 100% | Trent Miskelly | 24h | 24h |
| 165 | 1.4.4.3 | **Dialogs** | 2.25d? | 2007-01-30 A | 2007-02-01 A | 100% |  | 18h | 18h |
| 166 | 1.4.4.3.1 | System Status Dialog | 0.25d? | 2007-01-30 A | 2007-01-30 A | 100% | Trent Miskelly | 2h | 2h |
| 167 | 1.4.4.3.2 | Add View Dialog | 1d? | 2007-01-30 A | 2007-01-31 A | 100% | Trent Miskelly | 8h | 8h |
| 168 | 1.4.4.3.3 | View Properties Dialog | 1d? | 2007-01-31 A | 2007-02-01 A | 100% | Trent Miskelly | 8h | 8h |
| 169 | 1.4.5 | **Database** | 3d? | 2007-01-26 A | 2007-01-30 A | 100% |  | 24h | 24h |
| 170 | 1.4.5.1 | Snapshot schema support | 0.5d? | 2007-01-26 A | 2007-01-26 A | 100% | Vicky Sherrouse | 4h | 4h |
| 171 | 1.4.5.2 | Snapshot stored procedures | 0.5d? | 2007-01-26 A | 2007-01-26 A | 100% | Vicky Sherrouse | 4h | 4h |
| 172 | 1.4.5.3 | Report-related stored procedures | 2d? | 2007-01-27 A | 2007-01-30 A | 100% | Vicky Sherrouse | 16h | 16h |

| ID | WBS | Task | Type | Duration | Start | Finish | Complete | Constraint | Resources | Work | Actual work |
| --- | --- | --- | --- | --- | --- | --- | --- | --- | --- | --- | --- |
| 173 | 1.4.6 | **Install (32 bit)** |  | 5d? | 2007-01-02 A | 2007-01-08 A | 100% | start no earlier than 2007-01-02 |  | 40h | 40h |
| 174 | 1.4.6.1 | Full Install |  | 3d? | 2007-01-02 A | 2007-01-04 A | 100% |  | Mike White | 24h | 24h |
| 175 | 1.4.6.2 | Autorun |  | 2d? | 2007-01-05 A | 2007-01-08 A | 100% |  | Mike White | 16h | 16h |
| 176 | 1.4.7 | **Unit Testing** |  | 60.88d? | 2006-11-06 A | 2007-02-05 A | 100% |  |  | 48h | 48h |
| 177 | 1.4.7.1 | Trent |  | 2d? | 2007-02-01 A | 2007-02-05 A | 100% |  | Trent Miskelly | 16h | 16h |
| 178 | 1.4.7.2 | Vicky |  | 2d? | 2007-01-31 A | 2007-02-01 A | 100% |  | Vicky Sherrouse | 16h | 16h |
| 179 | 1.4.7.3 | Kurt |  | 2d? | 2007-01-16 A | 2007-01-18 A | 100% |  | Kurt Goolsbee | 16h | 16h |
| 180 | 1.4.7.4 | Mark | milestone | 0d? | 2006-11-06 A | 2006-11-06 A | 100% |  | Mark Lauitsen |  |  |
| 181 | 1.4.8 | **Previous Milestone PRs** |  | 62.88d? | 2006-11-06 A | 2007-02-07 A | 100% |  |  | 48h | 48h |
| 182 | 1.4.8.1 | Trent |  | 2d? | 2007-02-05 A | 2007-02-07 A | 100% |  | Trent Miskelly | 16h | 16h |
| 183 | 1.4.8.2 | Vicky |  | 2d? | 2007-02-02 A | 2007-02-03 A | 100% |  | Vicky Sherrouse | 16h | 16h |
| 184 | 1.4.8.3 | Kurt |  | 2d? | 2007-01-18 A | 2007-01-22 A | 100% |  | Kurt Goolsbee | 16h | 16h |
| 185 | 1.4.8.4 | Mark | milestone | 0d? | 2006-11-06 A | 2006-11-06 A | 100% |  | Mark Lauitsen |  |  |
| 186 | 1.5 | **M5 - Server overview + Tasks** |  | 27d? | 2007-01-22 A | 2007-02-28 A | 100% |  |  | 496h | 496h |
| 187 | 1.5.1 | **Customer Support PRs** |  | 2d? | 2007-02-07 A | 2007-02-09 A | 100% |  |  | 16h | 16h |
| 188 | 1.5.1.1 | Trent |  | 2d? | 2007-02-07 A | 2007-02-09 A | 100% |  | Trent Miskelly | 16h | 16h |
| 189 | 1.5.2 | **Collection Service** |  | 4.38d? | 2007-02-06 A | 2007-02-12 A | 100% |  |  | 32h | 32h |
| 190 | 1.5.2.1 | **On-Demand Snapshot Manager** |  | 4.38d? | 2007-02-06 A | 2007-02-12 A | 100% |  |  | 32h | 32h |
| 191 | 1.5.2.1.1 | Process on-demand requests |  | 3d? | 2007-02-06 A | 2007-02-08 A | 100% |  | Vicky Sherrouse | 24h | 24h |
| 192 | 1.5.2.1.2 | Probe - Overview > Configuration |  | 0.5d? | 2007-02-09 A | 2007-02-12 A | 100% |  | Trent Miskelly | 4h | 4h |
| 193 | 1.5.2.1.3 | Probe - Sessions > Summary |  | 0.5d? | 2007-02-09 A | 2007-02-09 A | 100% |  | Vicky Sherrouse | 4h | 4h |
| 194 | 1.5.3 | **Management Service** |  | 17d? | 2007-01-22 A | 2007-02-14 A | 100% |  |  | 120h | 120h |
| 195 | 1.5.3.1 | **Configuration Manager** |  | 4d? | 2007-01-22 A | 2007-01-26 A | 100% |  |  | 32h | 32h |
| 196 | 1.5.3.1.1 | Process notification provider configuration changes |  | 2d? | 2007-01-22 A | 2007-01-24 A | 100% |  | Kurt Goolsbee | 16h | 16h |
| 197 | 1.5.3.1.2 | Process notification rule configuration changes |  | 2d? | 2007-01-24 A | 2007-01-26 A | 100% |  | Kurt Goolsbee | 16h | 16h |

| ID | WBS | Task | Duration | Start | Finish | Complete | Resources | Work | Actual work |
| --- | --- | --- | --- | --- | --- | --- | --- | --- | --- |
| 198 | 1.5.3.2 | **On-Demand Snapshot Manager** | 3d? | 2007-02-09 A | 2007-02-14 A | 100% |  | 24h | 24h |
| 199 | 1.5.3.2.1 | Route requests | 2d? | 2007-02-09 A | 2007-02-13 A | 100% | Vicky Sherrouse | 16h | 16h |
| 200 | 1.5.3.2.2 | Instrumentation | 1d? | 2007-02-13 A | 2007-02-14 A | 100% | Vicky Sherrouse | 8h | 8h |
| 201 | 1.5.3.3 | **Notification Manager** | 8d? | 2007-01-26 A | 2007-02-07 A | 100% |  | 64h | 64h |
| 202 | 1.5.3.3.1 | Implement SMTP notification provider | 2d? | 2007-01-26 A | 2007-01-30 A | 100% | Kurt Goolsbee | 16h | 16h |
| 203 | 1.5.3.3.2 | Implement Windows Event Log notification provider | 2d? | 2007-01-30 A | 2007-02-01 A | 100% | Kurt Goolsbee | 16h | 16h |
| 204 | 1.5.3.3.3 | Implement SQLdm Task notification provider | 2d? | 2007-02-01 A | 2007-02-05 A | 100% | Kurt Goolsbee | 16h | 16h |
| 205 | 1.5.3.3.4 | Implement ODBC provider | 2d? | 2007-02-05 A | 2007-02-07 A | 100% | Kurt Goolsbee | 16h | 16h |
| 206 | 1.5.4 | **Desktop Client** | 10d? | 2007-02-07 A | 2007-02-21 A | 100% |  | 160h | 160h |
| 207 | 1.5.4.1 | **Views** | 8d? | 2007-02-08 A | 2007-02-20 A | 100% |  | 96h | 96h |
| 208 | 1.5.4.1.1 | **Servers** | 4d? | 2007-02-12 A | 2007-02-16 A | 100% |  | 32h | 32h |
| 209 | 1.5.4.1.1.1 | Server > Overview / Details | 1d? | 2007-02-12 A | 2007-02-13 A | 100% | Trent Miskelly | 8h | 8h |
| 210 | 1.5.4.1.1.2 | Server > Overview / Configuration | 2d? | 2007-02-13 A | 2007-02-15 A | 100% | Trent Miskelly | 16h | 16h |
| 211 | 1.5.4.1.1.3 | Server > Sessions / Summary | 1d? | 2007-02-15 A | 2007-02-16 A | 100% | Trent Miskelly | 8h | 8h |
| 212 | 1.5.4.1.2 | **Tasks** | 8d? | 2007-02-08 A | 2007-02-20 A | 100% |  | 64h | 64h |
| 213 | 1.5.4.1.2.1 | Tasks / Design & Screenshots | 2d? | 2007-02-08 A | 2007-02-12 A | 100% | Mark Lauitsen | 16h | 16h |
| 214 | 1.5.4.1.2.2 | Tasks / Navigation Pane | 2d? | 2007-02-12 A | 2007-02-14 A | 100% | Mark Lauitsen | 16h | 16h |
| 215 | 1.5.4.1.2.3 | Tasks / Viewer | 2d? | 2007-02-14 A | 2007-02-16 A | 100% | Mark Lauitsen | 16h | 16h |
| 216 | 1.5.4.1.2.4 | Tasks / Filters | 2d? | 2007-02-16 A | 2007-02-20 A | 100% | Mark Lauitsen | 16h | 16h |
| 217 | 1.5.4.2 | **Dialogs** | 10d? | 2007-02-07 A | 2007-02-21 A | 100% |  | 64h | 64h |
| 218 | 1.5.4.2.1 | Task Properties Dialog | 1d? | 2007-02-20 A | 2007-02-21 A | 100% | Mark Lauitsen | 8h | 8h |
| 219 | 1.5.4.2.2 | Add Notification Rule Dialog | 3d? | 2007-02-07 A | 2007-02-12 A | 100% | Kurt Goolsbee | 24h | 24h |
| 220 | 1.5.4.2.3 | Notification Rule Properties Dialog | 2d? | 2007-02-12 A | 2007-02-14 A | 100% | Kurt Goolsbee | 16h | 16h |
| 221 | 1.5.4.2.4 | Configure Notification Providers Dialog | 2d? | 2007-02-14 A | 2007-02-16 A | 100% | Kurt Goolsbee | 16h | 16h |

| ID | WBS | Task | Duration | Start | Finish | Complete | Resources | Work | Actual work |
| --- | --- | --- | --- | --- | --- | --- | --- | --- | --- |
| 222 | 1.5.5 | **Database** | 4.12d? | 2007-02-16 A | 2007-02-22 A | 100% |  | 16h | 16h |
| 223 | 1.5.5.1 | Servers view-related stored procedures | 1d? | 2007-02-16 A | 2007-02-19 A | 100% | Trent Miskelly | 8h | 8h |
| 224 | 1.5.5.2 | Tasks view-related stored procedures | 1d? | 2007-02-21 A | 2007-02-22 A | 100% | Mark Lauitsen | 8h | 8h |
| 225 | 1.5.6 | **Unit Testing** | 8d? | 2007-02-14 A | 2007-02-26 A | 100% |  | 64h | 64h |
| 226 | 1.5.6.1 | Trent | 2d? | 2007-02-19 A | 2007-02-21 A | 100% | Trent Miskelly | 16h | 16h |
| 227 | 1.5.6.2 | Vicky | 2d? | 2007-02-14 A | 2007-02-16 A | 100% | Vicky Sherrouse | 16h | 16h |
| 228 | 1.5.6.3 | Kurt | 2d? | 2007-02-16 A | 2007-02-20 A | 100% | Kurt Goolsbee | 16h | 16h |
| 229 | 1.5.6.4 | Mark | 2d? | 2007-02-22 A | 2007-02-26 A | 100% | Mark Lauitsen | 16h | 16h |
| 230 | 1.5.7 | **Previous Milestone PRs** | 8d? | 2007-02-16 A | 2007-02-28 A | 100% |  | 88h | 88h |
| 231 | 1.5.7.1 | Trent | 4d? | 2007-02-21 A | 2007-02-27 A | 100% | Trent Miskelly | 32h | 32h |
| 232 | 1.5.7.2 | Vicky | 2d? | 2007-02-16 A | 2007-02-20 A | 100% | Vicky Sherrouse | 16h | 16h |
| 233 | 1.5.7.3 | Kurt | 3d? | 2007-02-20 A | 2007-02-23 A | 100% | Kurt Goolsbee | 24h | 24h |
| 234 | 1.5.7.4 | Mark | 2d? | 2007-02-26 A | 2007-02-28 A | 100% | Mark Lauitsen | 16h | 16h |
| 235 | 1.6 | **M6 - Server - Sessions/Queries + Alerts** | 22.5d? | 2007-02-20 A | 2007-03-22 A | 100% |  | 638.1h | 638.1h |
| 236 | 1.6.1 | Ramp up time - O'Neal | 1d? | 2007-03-01 A | 2007-03-01 A | 100% | Mike O'Neal | 8h | 8h |
| 237 | 1.6.2 | **Customer Support PRs** | 2d? | 2007-02-27 A | 2007-03-01 A | 100% |  | 16h | 16h |
| 238 | 1.6.2.1 | Trent | 2d? | 2007-02-27 A | 2007-03-01 A | 100% | Trent Miskelly | 16h | 16h |
| 239 | 1.6.3 | **Collection Service** | 5.5d? | 2007-02-20 A | 2007-02-27 A | 100% |  | 44h | 44h |
| 240 | 1.6.3.1 | **On-Demand Snapshot Manager** | 5.5d? | 2007-02-20 A | 2007-02-27 A | 100% |  | 44h | 44h |
| 241 | 1.6.3.1.1 | Probe - Sessions > Details | 2d? | 2007-02-20 A | 2007-02-22 A | 100% | Vicky Sherrouse | 16h | 16h |
| 242 | 1.6.3.1.2 | Probe - Sessions > Locks | 1d? | 2007-02-22 A | 2007-02-23 A | 100% | Vicky Sherrouse | 8h | 8h |
| 243 | 1.6.3.1.3 | Probe - Sessions > Blocking | 2d? | 2007-02-23 A | 2007-02-27 A | 100% | Vicky Sherrouse | 16h | 16h |
| 244 | 1.6.3.1.4 | Probe - Sessions > Oldest Open Transactions | 0.5d? | 2007-02-27 A | 2007-02-27 A | 100% | Vicky Sherrouse | 4h | 4h |
| 245 | 1.6.4 | **Desktop Client** | 13.51d? | 2007-02-23 A | 2007-03-15 A | 100% |  | 152h | 152h |
| 246 | 1.6.4.1 | **Views** | 13.51d? | 2007-02-23 A | 2007-03-15 A | 100% |  | 128h | 128h |
| 247 | 1.6.4.1.1 | **Alerts** | 6d? | 2007-02-23 A | 2007-03-05 A | 100% |  | 48h | 48h |
| 248 | 1.6.4.1.1.1 | Alerts / Design & Screenshots | 2d? | 2007-02-23 A | 2007-02-27 A | 100% | Kurt Goolsbee | 16h | 16h |
| 249 | 1.6.4.1.1.2 | Alerts / Navigation Pane | 2d? | 2007-02-27 A | 2007-03-01 A | 100% | Kurt Goolsbee | 16h | 16h |
| 250 | 1.6.4.1.1.3 | Alerts / Log | 2d? | 2007-03-01 A | 2007-03-05 A | 100% | Kurt Goolsbee | 16h | 16h |

| ID | WBS | Task | Duration | Start | Finish | Predecessors | Complete | Resources | Work | Actual work |
| --- | --- | --- | --- | --- | --- | --- | --- | --- | --- | --- |
| 251 | 1.6.4.1.2 | **Servers** | 9.64d? | 2007-03-01 A | 2007-03-15 A |  | 100% |  | 80h | 80h |
| 252 | 1.6.4.1.2.1 | Server > Sessions / Details - Layout | 0.5d? | 2007-03-01 A | 2007-03-01 A |  | 100% | Trent Miskelly | 4h | 4h |
| 253 | 1.6.4.1.2.2 | Server > Sessions / Details - Data | 2d? | 2007-03-02 A | 2007-03-12 A | 252 | 100% | Mike O'Neal | 16h | 16h |
| 254 | 1.6.4.1.2.3 | Server > Sessions / Locks - Layout | 0.5d? | 2007-03-01 A | 2007-03-02 A |  | 100% | Trent Miskelly | 4h | 4h |
| 255 | 1.6.4.1.2.4 | Server > Sessions / Locks - Data | 1d? | 2007-03-02 A | 2007-03-13 A | 254 | 100% | Mike O'Neal | 8h | 8h |
| 256 | 1.6.4.1.2.5 | Server > Sessions / Blocking - Layout | 1d? | 2007-03-02 A | 2007-03-05 A |  | 100% | Trent Miskelly | 8h | 8h |
| 257 | 1.6.4.1.2.6 | Server > Sessions / Blocking - Data | 2d? | 2007-03-05 A | 2007-03-14 A | 256 | 100% | Mike O'Neal | 16h | 16h |
| 258 | 1.6.4.1.2.7 | Server > Queries / Monitor - Layout | 1d? | 2007-03-05 A | 2007-03-06 A |  | 100% | Trent Miskelly | 8h | 8h |
| 259 | 1.6.4.1.2.8 | Server > Queries / Monitor - Data | 2d? | 2007-03-06 A | 2007-03-15 A | 258 | 100% | Mike O'Neal | 16h | 16h |
| 260 | 1.6.4.2 | **Reports** | 3d? | 2007-02-28 A | 2007-03-05 A |  | 100% |  | 24h | 24h |
| 261 | 1.6.4.2.1 | Reports / Infrastructure (2) | 3d? | 2007-02-28 A | 2007-03-05 A |  | 100% | Mark Lauitsen | 24h | 24h |
| 262 | 1.6.5 | **Database** | 1d? | 2007-02-28 A | 2007-02-28 A |  | 100% |  | 8h | 8h |
| 263 | 1.6.5.1 | Query monitor stored procedures | 1d? | 2007-02-28 A | 2007-02-28 A |  | 100% | Vicky Sherrouse | 8h | 8h |
| 264 | 1.6.6 | **Unit Testing** | 15.01d? | 2007-03-01 A | 2007-03-22 A |  | 100% |  | 120h | 120h |
| 265 | 1.6.6.1 | Trent | 2d? | 2007-03-07 A | 2007-03-09 A |  | 100% | Trent Miskelly | 16h | 16h |
| 266 | 1.6.6.2 | Vicky | 2d? | 2007-03-01 A | 2007-03-02 A |  | 100% | Vicky Sherrouse | 16h | 16h |
| 267 | 1.6.6.3 | Kurt | 2d? | 2007-03-05 A | 2007-03-07 A |  | 100% | Kurt Goolsbee | 16h | 16h |
| 268 | 1.6.6.4 | Mark | 2d? | 2007-03-05 A | 2007-03-07 A |  | 100% | Mark Lauitsen | 16h | 16h |
| 269 | 1.6.6.5 | Mike | 7d? | 2007-03-05 A | 2007-03-22 A |  | 100% | Mike O'Neal | 56h | 56h |
| 270 | 1.6.7 | **Previous Milestone PRs** | 14d? | 2007-03-03 A | 2007-03-22 A |  | 100% |  | 290.1h | 290.1h |
| 271 | 1.6.7.1 | Trent | 9d? | 2007-03-09 A | 2007-03-22 A |  | 100% | Trent Miskelly | 72h | 72h |
| 272 | 1.6.7.2 | Vicky | 14d? | 2007-03-03 A | 2007-03-22 A |  | 100% | Vicky Sherrouse | 112h | 112h |
| 273 | 1.6.7.3 | Kurt | 11.25d? | 2007-03-07 A | 2007-03-22 A |  | 100% | Kurt Goolsbee | 90h | 90h |
| 274 | 1.6.7.4 | Mark | 2d? | 2007-03-07 A | 2007-03-09 A |  | 100% | Mark Lauitsen | 16h | 16h |
| 275 | 1.6.7.5 | Mike | 0.01d? | 2007-03-09 A | 2007-03-09 A |  | 100% | Mike O'Neal | 0.1h | 0.1h |

| ID | WBS | Task | Duration | Start | Finish | Predecessors | Complete | Resources | Work | Actual work |
| --- | --- | --- | --- | --- | --- | --- | --- | --- | --- | --- |
| 276 | 1.7 | **M7 - Resources/Logs + Reports** | 27.14d? | 2007-03-06 A | 2007-04-13 A |  | 100% |  | 560h | 560h |
| 277 | 1.7.1 | **Customer Support PRs** | 1d? | 2007-03-06 A | 2007-03-07 A |  | 100% |  | 8h | 8h |
| 278 | 1.7.1.1 | Trent | 1d? | 2007-03-06 A | 2007-03-07 A |  | 100% | Trent Miskelly | 8h | 8h |
| 279 | 1.7.2 | **Collection Service** | 8.5d? | 2007-03-23 A | 2007-04-04 A |  | 100% |  | 60h | 60h |
| 280 | 1.7.2.1 | **On-Demand Snapshot Manager** | 7.5d? | 2007-03-23 A | 2007-04-03 A |  | 100% |  | 52h | 52h |
| 281 | 1.7.2.1.1 | Probe - Blocking by session | 0.5d? | 2007-03-23 A | 2007-03-23 A |  | 100% | Vicky Sherrouse | 4h | 4h |
| 282 | 1.7.2.1.2 | Probe - Logs > SQL Server Error Log | 0.5d? | 2007-03-23 A | 2007-03-23 A |  | 100% | Vicky Sherrouse | 4h | 4h |
| 283 | 1.7.2.1.3 | Probe - Logs > SQL Agent Error Log | 0.5d? | 2007-03-24 A | 2007-03-24 A |  | 100% | Vicky Sherrouse | 4h | 4h |
| 284 | 1.7.2.1.4 | Probe - Resource probe research | 1d? | 2007-03-24 A | 2007-03-27 A |  | 100% | Vicky Sherrouse | 8h | 8h |
| 285 | 1.7.2.1.5 | Probe - Resources > Summary | 0.5d? | 2007-03-27 A | 2007-03-27 A |  | 100% | Vicky Sherrouse | 4h | 4h |
| 286 | 1.7.2.1.6 | Probe - Resources > CPU | 0.5d? | 2007-03-28 A | 2007-03-28 A |  | 100% | Vicky Sherrouse | 4h | 4h |
| 287 | 1.7.2.1.7 | Probe - Resources > Memory | 0.5d? | 2007-03-28 A | 2007-03-28 A |  | 100% | Vicky Sherrouse | 4h | 4h |
| 288 | 1.7.2.1.8 | Probe - Resources > Disk | 0.5d? | 2007-03-29 A | 2007-03-29 A |  | 100% | Vicky Sherrouse | 4h | 4h |
| 289 | 1.7.2.1.9 | Probe - Resources > Procedure Cache | 1d? | 2007-03-29 A | 2007-03-30 A |  | 100% | Vicky Sherrouse | 8h | 8h |
| 290 | 1.7.2.1.10 | Probe - support/integration | 1d? | 2007-03-30 A | 2007-04-03 A |  | 100% | Vicky Sherrouse | 8h | 8h |
| 291 | 1.7.2.2 | Handling scheduled refresh - alert configuration & quiet time | 1d? | 2007-04-03 A | 2007-04-04 A |  | 100% | Vicky Sherrouse | 8h | 8h |
| 292 | 1.7.3 | **Desktop Client** | 19.88d? | 2007-03-09 A | 2007-04-09 A |  | 100% |  | 324h | 324h |
| 293 | 1.7.3.1 | **Dialogs** | 6d? | 2007-03-22 A | 2007-03-30 A |  | 100% |  | 44h | 44h |
| 294 | 1.7.3.1.1 | Metric Properties Dialog - Layout | 1d? | 2007-03-22 A | 2007-03-23 A |  | 100% | Kurt Goolsbee | 8h | 8h |
| 295 | 1.7.3.1.2 | Metric Properties Dialog - Data | 1d? | 2007-03-23 A | 2007-03-26 A |  | 100% | Kurt Goolsbee | 8h | 8h |
| 296 | 1.7.3.1.3 | Console Options Dialog | 3d? | 2007-03-26 A | 2007-03-29 A |  | 100% | Kurt Goolsbee | 24h | 24h |
| 297 | 1.7.3.1.4 | Server Properties - Quiet Time | 1d? | 2007-03-29 A | 2007-03-30 A |  | 100% | Kurt Goolsbee [50%] | 4h | 4h |
| 298 | 1.7.3.2 | **Views** | 11d? | 2007-03-22 A | 2007-04-09 A |  | 100% |  | 136h | 136h |
| 299 | 1.7.3.2.1 | **Servers** | 11d? | 2007-03-22 A | 2007-04-09 A |  | 100% |  | 136h | 136h |
| 300 | 1.7.3.2.1.1 | Server > Logs / SQL Server - Layout | 1d? | 2007-03-22 A | 2007-03-23 A |  | 100% | Trent Miskelly | 8h | 8h |
| 301 | 1.7.3.2.1.2 | Server > Logs / SQL Server - Data | 2d? | 2007-03-23 A | 2007-03-27 A | 300 | 100% | Mike O'Neal | 16h | 16h |
| 302 | 1.7.3.2.1.3 | Server > Logs / SQL Server Agent - Layout | 1d? | 2007-03-23 A | 2007-03-26 A |  | 100% | Trent Miskelly | 8h | 8h |
| 303 | 1.7.3.2.1.4 | Server > Logs / SQL Server Agent - Data | 2d? | 2007-03-27 A | 2007-03-29 A | 302 | 100% | Mike O'Neal | 16h | 16h |
| 304 | 1.7.3.2.1.5 | Server > Resources / Summary - Layout | 0.5d? | 2007-03-26 A | 2007-03-26 A |  | 100% | Trent Miskelly | 4h | 4h |
| 305 | 1.7.3.2.1.6 | Server > Resources / Summary - Data | 1.5d? | 2007-03-29 A | 2007-03-30 A | 304 | 100% | Mike O'Neal | 12h | 12h |
| 306 | 1.7.3.2.1.7 | Server > Resources / CPU - Layout | 0.5d? | 2007-03-26 A | 2007-03-27 A |  | 100% | Trent Miskelly | 4h | 4h |
| 307 | 1.7.3.2.1.8 | Server > Resources / CPU - Data | 1.5d? | 2007-03-30 A | 2007-04-03 A | 306 | 100% | Mike O'Neal | 12h | 12h |
| 308 | 1.7.3.2.1.9 | Server > Resources / Memory - Layout | 0.5d? | 2007-03-27 A | 2007-03-27 A |  | 100% | Trent Miskelly | 4h | 4h |
| 309 | 1.7.3.2.1.10 | Server > Resources / Memory - Data | 1.5d? | 2007-04-03 A | 2007-04-04 A | 308 | 100% | Mike O'Neal | 12h | 12h |
| 310 | 1.7.3.2.1.11 | Server > Resources / Disk - Layout | 0.5d? | 2007-03-27 A | 2007-03-28 A |  | 100% | Trent Miskelly | 4h | 4h |
| 311 | 1.7.3.2.1.12 | Server > Resources / Disk - Data | 1.5d? | 2007-04-04 A | 2007-04-09 A | 310 | 100% | Mike O'Neal | 12h | 12h |
| 312 | 1.7.3.2.1.13 | Server > Resources / Procedure Cache - Layout | 1d? | 2007-03-28 A | 2007-03-29 A |  | 100% | Trent Miskelly | 8h | 8h |
| 313 | 1.7.3.2.1.14 | Server > Resources / Procedure Cache - Data | 2d? | 2007-03-29 A | 2007-04-02 A | 312 | 100% | Trent Miskelly | 16h | 16h |

| ID | WBS | Task | Duration | Start | Finish | Complete | Total slack | Resources | Work | Actual work |
| --- | --- | --- | --- | --- | --- | --- | --- | --- | --- | --- |
| 314 | 1.7.3.3 | **Reports** | 18.88d? | 2007-03-09 A | 2007-04-05 A | 100% |  |  | 128h | 128h |
| 315 | 1.7.3.3.1 | Reports / Actual reports (Overview, memory, etc) | 11d? | 2007-03-09 A | 2007-03-28 A | 100% |  | Mark Lauitsen | 88h | 88h |
| 316 | 1.7.3.3.2 | Reports / Layout work | 2d? | 2007-03-28 A | 2007-03-30 A | 100% |  | Mark Lauitsen | 16h | 16h |
| 317 | 1.7.3.3.3 | Reports / Main nav pane | 3d? | 2007-04-02 A | 2007-04-05 A | 100% |  | Trent Miskelly | 24h | 24h |
| 318 | 1.7.3.4 | Help Integration | 2d? | 2007-03-30 A | 2007-04-03 A | 100% |  | Mark Lauitsen | 16h | 16h |
| 319 | 1.7.4 | **Database** | 11.5d? | 2007-03-22 A | 2007-04-09 A | 100% |  |  | 12h | 12h |
| 320 | 1.7.4.1 | View-related stored procedures | 1.5d? | 2007-03-22 A | 2007-04-09 A | 100% |  | Mike O'Neal | 12h | 12h |
| 321 | 1.7.5 | **Unit Testing** | 6.76d? | 2007-03-30 A | 2007-04-11 A | 100% |  |  | 68h | 68h |
| 322 | 1.7.5.1 | Trent | 2d? | 2007-04-05 A | 2007-04-10 A | 100% |  | Trent Miskelly | 16h | 16h |
| 323 | 1.7.5.2 | Vicky | 0.5d? | 2007-04-04 A | 2007-04-04 A | 100% |  | Vicky Sherrouse | 4h | 4h |
| 324 | 1.7.5.3 | Kurt | 2d? | 2007-03-30 A | 2007-04-03 A | 100% |  | Kurt Goolsbee | 16h | 16h |
| 325 | 1.7.5.4 | Mark | 2d? | 2007-04-03 A | 2007-04-05 A | 100% |  | Mark Lauitsen | 16h | 16h |
| 326 | 1.7.5.5 | Mike | 2d? | 2007-04-09 A | 2007-04-11 A | 100% |  | Mike O'Neal | 16h | 16h |
| 327 | 1.7.6 | **Previous Milestone PRs** | 6.76d? | 2007-04-03 A | 2007-04-13 A | 100% |  |  | 88h | 88h |
| 328 | 1.7.6.1 | Trent | 2d? | 2007-04-10 A | 2007-04-12 A | 100% |  | Trent Miskelly | 16h | 16h |
| 329 | 1.7.6.2 | Vicky | 2d? | 2007-04-05 A | 2007-04-06 A | 100% |  | Vicky Sherrouse | 16h | 16h |
| 330 | 1.7.6.3 | Kurt | 3d? | 2007-04-03 A | 2007-04-09 A | 100% |  | Kurt Goolsbee | 24h | 24h |
| 331 | 1.7.6.4 | Mark | 2d? | 2007-04-05 A | 2007-04-10 A | 100% |  | Mark Lauitsen | 16h | 16h |
| 332 | 1.7.6.5 | Mike | 2d? | 2007-04-11 A | 2007-04-13 A | 100% |  | Mike O'Neal | 16h | 16h |
| 333 | 1.8 | **M8 - Database** | 16.51d? | 2007-04-07 | 2007-05-01 |  | 13.01d |  | 316.1h |  |
| 334 | 1.8.1 | **Customer Support PRs** | 1d? | 2007-04-12 | 2007-04-13 |  | 25.15d |  | 8h |  |
| 335 | 1.8.1.1 | Trent | 1d? | 2007-04-12 | 2007-04-13 |  | 25.15d | Trent Miskelly | 8h |  |
| 336 | 1.8.2 | **Collection Service** | 6.5d? | 2007-04-07 | 2007-04-17 |  | 23.02d |  | 52h |  |
| 337 | 1.8.2.1 | **On-Demand Snapshot Manager** | 6.5d? | 2007-04-07 | 2007-04-17 |  | 23.02d |  | 52h |  |
| 338 | 1.8.2.1.1 | Probe - Databases > Summary | 0.5d? | 2007-04-07 | 2007-04-07 |  | 29.02d | Vicky Sherrouse | 4h |  |
| 339 | 1.8.2.1.2 | Probe - Databases > Configuration | 0.5d? | 2007-04-07 | 2007-04-07 |  | 29.02d | Vicky Sherrouse | 4h |  |
| 340 | 1.8.2.1.3 | Probe - Databases > Backups/Restores | 1d? | 2007-04-10 | 2007-04-10 |  | 27.52d | Vicky Sherrouse | 8h |  |
| 341 | 1.8.2.1.4 | Probe - Databases > Tables | 0.5d? | 2007-04-11 | 2007-04-11 |  | 27.02d | Vicky Sherrouse | 4h |  |
| 342 | 1.8.2.1.5 | Probe - Databases > Indexes | 0.5d? | 2007-04-11 | 2007-04-11 |  | 26.52d | Vicky Sherrouse | 4h |  |
| 343 | 1.8.2.1.6 | Probe - Databases > Files (???) | 2d? | 2007-04-12 | 2007-04-13 |  | 24.52d | Vicky Sherrouse | 16h |  |
| 344 | 1.8.2.1.7 | Probe - support/integration | 1.5d? | 2007-04-14 | 2007-04-17 |  | 23.02d | Vicky Sherrouse | 12h |  |

| ID | WBS | Task | Duration | Start | Finish | Predecessors | Total slack | Free slack | Resources | Work |
| --- | --- | --- | --- | --- | --- | --- | --- | --- | --- | --- |
| 345 | 1.8.3 | **Desktop Client** | 9.88d? | 2007-04-10 | 2007-04-24 |  | 18.15d |  |  | 112h |
| 346 | 1.8.3.1 | **Views** | 7d? | 2007-04-13 | 2007-04-24 |  | 18.15d |  |  | 96h |
| 347 | 1.8.3.1.1 | **Servers** | 7d? | 2007-04-13 | 2007-04-24 |  | 18.15d |  |  | 96h |
| 348 | 1.8.3.1.1.1 | Server > Databases / Summary - Layout | 0.5d? | 2007-04-13 | 2007-04-13 |  | 23.15d | 0d | Trent Miskelly | 4h |
| 349 | 1.8.3.1.1.2 | Server > Databases / Summary - Data | 1.5d? | 2007-04-13 | 2007-04-17 | 348 | 23.15d |  | Mike O'Neal | 12h |
| 350 | 1.8.3.1.1.3 | Server > Databases / Configuration - Layout | 0.5d? | 2007-04-13 | 2007-04-16 |  | 21.65d | 0d | Trent Miskelly | 4h |
| 351 | 1.8.3.1.1.4 | Server > Databases / Configuration - Data | 1.5d? | 2007-04-17 | 2007-04-18 | 350 | 21.65d |  | Mike O'Neal | 12h |
| 352 | 1.8.3.1.1.5 | Server > Databases / Backups/Restores - Layout | 0.5d? | 2007-04-16 | 2007-04-16 |  | 20.15d | 0d | Trent Miskelly | 4h |
| 353 | 1.8.3.1.1.6 | Server > Databases / Backups/Restores - Data | 1.5d? | 2007-04-18 | 2007-04-20 | 352 | 20.15d |  | Mike O'Neal | 12h |
| 354 | 1.8.3.1.1.7 | Server > Databases / Files - Layout | 1d? | 2007-04-16 | 2007-04-17 |  | 18.12d | 0d | Trent Miskelly | 8h |
| 355 | 1.8.3.1.1.8 | Server > Databases / Files - Data | 2d? | 2007-04-20 | 2007-04-24 | 354 | 18.15d |  | Mike O'Neal | 16h |
| 356 | 1.8.3.1.1.9 | Server > Databases / Tables/Indexes - Layout | 1d? | 2007-04-17 | 2007-04-18 |  | 19.65d | 0d | Trent Miskelly | 8h |
| 357 | 1.8.3.1.1.10 | Server > Databases / Tables/Indexes - Data | 2d? | 2007-04-18 | 2007-04-20 | 356 | 19.65d |  | Trent Miskelly | 16h |
| 358 | 1.8.3.2 | Help Integration | 2d? | 2007-04-10 | 2007-04-12 |  | 26.02d |  | Mark Lauitsen | 16h |
| 359 | 1.8.4 | **Database** | 8d? | 2007-04-13 | 2007-04-25 |  | 17.01d |  |  | 12h |
| 360 | 1.8.4.1 | View-related stored procedures | 1.5d? | 2007-04-13 | 2007-04-25 |  | 17.01d |  | Mike O'Neal | 12h |
| 361 | 1.8.5 | **Unit Testing** | 13.76d? | 2007-04-09 | 2007-04-27 |  | 15.01d |  |  | 52.1h |
| 362 | 1.8.5.1 | Trent | 2d? | 2007-04-20 | 2007-04-24 |  | 17.65d |  | Trent Miskelly | 16h |
| 363 | 1.8.5.2 | Vicky | 0.5d? | 2007-04-17 | 2007-04-17 |  | 22.52d |  | Vicky Sherrouse | 4h |
| 364 | 1.8.5.3 | Kurt | 0.01d? | 2007-04-09 | 2007-04-09 |  | 28.76d |  | Kurt Goolsbee | 0.1h |
| 365 | 1.8.5.4 | Mark | 2d? | 2007-04-12 | 2007-04-16 |  | 24.02d |  | Mark Lauitsen | 16h |
| 366 | 1.8.5.5 | Mike | 2d? | 2007-04-25 | 2007-04-27 |  | 15.01d |  | Mike O'Neal | 16h |
| 367 | 1.8.6 | **Previous Milestone PRs** | 15.75d? | 2007-04-09 | 2007-05-01 |  | 13.01d |  |  | 80h |
| 368 | 1.8.6.1 | Trent | 2d? | 2007-04-24 | 2007-04-26 |  | 15.65d |  | Trent Miskelly | 16h |
| 369 | 1.8.6.2 | Vicky | 2d? | 2007-04-18 | 2007-04-19 |  | 20.52d |  | Vicky Sherrouse | 16h |
| 370 | 1.8.6.3 | Kurt | 2d? | 2007-04-09 | 2007-04-11 |  | 26.76d |  | Kurt Goolsbee | 16h |
| 371 | 1.8.6.4 | Mark | 2d? | 2007-04-16 | 2007-04-18 |  | 22.02d |  | Mark Lauitsen | 16h |
| 372 | 1.8.6.5 | Mike | 2d? | 2007-04-27 | 2007-05-01 |  | 13.01d |  | Mike O'Neal | 16h |

| ID | WBS | Task | Duration | Start | Finish | Total slack | Resources | Work |
| --- | --- | --- | --- | --- | --- | --- | --- | --- |
| 373 | 1.9 | **M 8.5 - Server Monitor View** | 9d? | 2007-04-26 | 2007-05-09 | 6.65d |  | 72h |
| 374 | 1.9.1 | **Desktop Client** | 9d? | 2007-04-26 | 2007-05-09 | 6.65d |  | 72h |
| 375 | 1.9.1.1 | **Server Monitor View** | 9d? | 2007-04-26 | 2007-05-09 | 6.65d |  | 72h |
| 376 | 1.9.1.1.1 | Monitor view layout change + design | 4d? | 2007-04-26 | 2007-05-02 | 11.65d | Trent Miskelly | 32h |
| 377 | 1.9.1.1.2 | Monitor view bug fixes | 2d? | 2007-05-02 | 2007-05-04 | 9.65d | Trent Miskelly | 16h |
| 378 | 1.9.1.1.3 | Monitor view performance | 3d? | 2007-05-04 | 2007-05-09 | 6.65d | Trent Miskelly | 24h |
| 379 | 1.10 | **M9 - Service + Import + Install (64 bit)** | 23.13d? | 2007-04-11 | 2007-05-14 | 3.64d |  | 376.2h |
| 380 | 1.10.1 | **Customer Support PRs** | 1d? | 2007-05-09 | 2007-05-10 | 5.65d |  | 8h |
| 381 | 1.10.1.1 | Trent | 1d? | 2007-05-09 | 2007-05-10 | 5.65d | Trent Miskelly | 8h |
| 382 | 1.10.2 | **Management Service** | 4d? | 2007-04-11 | 2007-04-17 | 22.76d |  | 32h |
| 383 | 1.10.2.1 | **License** | 4d? | 2007-04-11 | 2007-04-17 | 22.76d |  | 32h |
| 384 | 1.10.2.1.1 | License management - upgrade trial, add and remove | 2d? | 2007-04-11 | 2007-04-13 | 24.76d | Kurt Goolsbee | 16h |
| 385 | 1.10.2.1.2 | License enforcement - expiration, count violation | 2d? | 2007-04-13 | 2007-04-17 | 22.76d | Kurt Goolsbee | 16h |
| 386 | 1.10.3 | **Collection Service** | 5d? | 2007-04-20 | 2007-04-26 | 15.53d |  | 36h |
| 387 | 1.10.3.1 | **On-Demand Snapshot Manager** | 5d? | 2007-04-20 | 2007-04-26 | 15.53d |  | 36h |
| 388 | 1.10.3.1.1 | Probe - Services > Summary | 1d? | 2007-04-20 | 2007-04-20 | 19.52d | Vicky Sherrouse | 8h |
| 389 | 1.10.3.1.2 | Probe - Services > Agent Jobs | 2d? | 2007-04-21 | 2007-04-24 | 17.52d | Vicky Sherrouse | 16h |
| 390 | 1.10.3.1.3 | Probe - Services > Full-Text Search | 0.5d? | 2007-04-25 | 2007-04-25 | 17.02d | Vicky Sherrouse | 4h |
| 391 | 1.10.3.1.4 | Probe - Services > Replication | 0.5d? | 2007-04-25 | 2007-04-25 | 16.52d | Vicky Sherrouse | 4h |
| 392 | 1.10.3.1.5 | Probe - support/integration | 1d? | 2007-04-26 | 2007-04-26 | 15.53d | Vicky Sherrouse [50%] | 4h |
| 393 | 1.10.4 | **Desktop Client** | 10.5d? | 2007-04-17 | 2007-05-02 | 12.26d |  | 136h |
| 394 | 1.10.4.1 | **License** | 3d? | 2007-04-18 | 2007-04-23 | 19.02d |  | 24h |
| 395 | 1.10.4.1.1 | License dialog - add, remove and upgrade trial | 1d? | 2007-04-18 | 2007-04-19 | 21.02d | Mark Lauitsen | 8h |
| 396 | 1.10.4.1.2 | License expiration warning | 1d? | 2007-04-19 | 2007-04-20 | 20.02d | Mark Lauitsen | 8h |
| 397 | 1.10.4.1.3 | License expiration count handling | 1d? | 2007-04-20 | 2007-04-23 | 19.02d | Mark Lauitsen | 8h |

| ID | WBS | Task | Duration | Start | Finish | Predecessors | Total slack | Free slack | Constraint | Resources | Work |
| --- | --- | --- | --- | --- | --- | --- | --- | --- | --- | --- | --- |
| 398 | 1.10.4.2 | **Task Panes** | 3d? | 2007-04-17 | 2007-04-20 |  | 19.76d |  |  |  | 24h |
| 399 | 1.10.4.2.1 | History Browser | 3d? | 2007-04-17 | 2007-04-20 |  | 19.76d |  |  | Kurt Goolsbee | 24h |
| 400 | 1.10.4.3 | **Views** | 7.5d? | 2007-04-20 | 2007-05-02 |  | 12.26d |  |  |  | 60h |
| 401 | 1.10.4.3.1 | **Servers** | 7.5d? | 2007-04-20 | 2007-05-02 |  | 12.26d |  |  |  | 60h |
| 402 | 1.10.4.3.1.1 | Server > Services / Service Status - Layout | 0.5d? | 2007-04-20 | 2007-04-23 |  | 18.26d | 0d |  | Kurt Goolsbee | 4h |
| 403 | 1.10.4.3.1.2 | Server > Services / Service Status - Data | 1d? | 2007-04-23 | 2007-04-24 | 402 | 18.26d |  |  | Kurt Goolsbee | 8h |
| 404 | 1.10.4.3.1.3 | Server > Services / Agent Jobs - Layout | 0.5d? | 2007-04-24 | 2007-04-24 |  | 16.76d | 0d |  | Kurt Goolsbee | 4h |
| 405 | 1.10.4.3.1.4 | Server > Services / Agent Jobs - Data | 1d? | 2007-04-24 | 2007-04-25 | 404 | 16.76d |  |  | Kurt Goolsbee | 8h |
| 406 | 1.10.4.3.1.5 | Server > Services / Full-Text Search - Layout | 0.5d? | 2007-04-25 | 2007-04-26 |  | 15.26d | 0d |  | Kurt Goolsbee | 4h |
| 407 | 1.10.4.3.1.6 | Server > Services / Full-Text Search - Data | 1d? | 2007-04-26 | 2007-04-27 | 406 | 15.26d |  |  | Kurt Goolsbee | 8h |
| 408 | 1.10.4.3.1.7 | Server > Services / Replication - Layout | 1d? | 2007-04-27 | 2007-04-30 |  | 12.26d | 0d |  | Kurt Goolsbee | 8h |
| 409 | 1.10.4.3.1.8 | Server > Services / Replication - Data | 2d? | 2007-04-30 | 2007-05-02 | 408 | 12.26d |  |  | Kurt Goolsbee | 16h |
| 410 | 1.10.4.4 | **Dialogs** | 1.5d? | 2007-04-23 | 2007-04-24 |  | 17.52d |  |  |  | 12h |
| 411 | 1.10.4.4.1 | Grooming properties/schedule | 1.5d? | 2007-04-23 | 2007-04-24 |  | 17.52d |  |  | Mark Lauitsen | 12h |
| 412 | 1.10.4.5 | Help Integration | 2d? | 2007-04-25 | 2007-04-26 |  | 15.53d |  |  | Mark Lauitsen | 16h |
| 413 | 1.10.5 | **Database** | 4.76d? | 2007-04-27 | 2007-05-03 |  | 10.76d |  |  |  | 24h |
| 414 | 1.10.5.1 | View-related stored procedures | 1.5d? | 2007-05-02 | 2007-05-03 |  | 10.76d |  |  | Kurt Goolsbee | 12h |
| 415 | 1.10.5.2 | Grooming support | 1.5d? | 2007-04-27 | 2007-04-28 |  | 14.03d |  |  | Vicky Sherrouse | 12h |
| 416 | 1.10.6 | **Install (64 bit)** | 3d? | 2007-05-08 | 2007-05-10 |  | 5.53d |  | start no earlier than 2007-05-08 |  | 24h |
| 417 | 1.10.6.1 | IA64 | 1.5d? | 2007-05-08 | 2007-05-09 |  | 7.03d |  |  | Mike White | 12h |
| 418 | 1.10.6.2 | x64 | 1.5d? | 2007-05-09 | 2007-05-10 |  | 5.53d |  |  | Mike White | 12h |
| 419 | 1.10.7 | **Unit Testing** | 9.89d? | 2007-04-27 | 2007-05-10 |  | 5.64d |  |  |  | 36.2h |
| 420 | 1.10.7.1 | Trent | 0.01d? | 2007-05-10 | 2007-05-10 |  | 5.64d |  |  | Trent Miskelly | 0.1h |
| 421 | 1.10.7.2 | Vicky | 0.5d? | 2007-04-28 | 2007-04-28 |  | 14.03d |  |  | Vicky Sherrouse | 4h |
| 422 | 1.10.7.3 | Kurt | 2d? | 2007-05-03 | 2007-05-07 |  | 8.76d |  |  | Kurt Goolsbee | 16h |
| 423 | 1.10.7.4 | Mark | 2d? | 2007-04-27 | 2007-04-30 |  | 13.53d |  |  | Mark Lauitsen | 16h |
| 424 | 1.10.7.5 | Mike | 0.01d? | 2007-05-01 | 2007-05-01 |  | 13d |  |  | Mike O'Neal | 0.1h |

| ID | WBS | Task | Duration | Start | Finish | Predecessors | Total slack | Free slack | Resources | Work |
| --- | --- | --- | --- | --- | --- | --- | --- | --- | --- | --- |
| 425 | 1.10.8 | **Previous Milestone PRs** | 9.89d? | 2007-05-01 | 2007-05-14 |  | 3.64d |  |  | 80h |
| 426 | 1.10.8.1 | Trent | 2d? | 2007-05-10 | 2007-05-14 |  | 3.64d |  | Trent Miskelly | 16h |
| 427 | 1.10.8.2 | Vicky | 2d? | 2007-05-01 | 2007-05-02 |  | 11.53d |  | Vicky Sherrouse | 16h |
| 428 | 1.10.8.3 | Kurt | 2d? | 2007-05-07 | 2007-05-09 |  | 6.76d |  | Kurt Goolsbee | 16h |
| 429 | 1.10.8.4 | Mark | 2d? | 2007-05-01 | 2007-05-02 |  | 11.53d |  | Mark Lauitsen | 16h |
| 430 | 1.10.8.5 | Mike | 2d? | 2007-05-01 | 2007-05-03 |  | 11d |  | Mike O'Neal | 16h |
| 432 | 1.11 | **Deferred** | 16.52d? | 2007-04-26 | 2007-05-18 |  | 0d |  |  | 212.3h |
| 433 | 1.11.1 | **M10 - Transaction Log Viewer** | 16.52d? | 2007-04-26 | 2007-05-18 |  | 0d |  |  | 212.3h |
| 434 | 1.11.1.1 | **Collection Service** | 12d? | 2007-04-26 | 2007-05-11 |  | 4.53d |  |  | 56h |
| 435 | 1.11.1.1.1 | **On-Demand Snapshot Manager** | 12d? | 2007-04-26 | 2007-05-11 |  | 4.53d |  |  | 56h |
| 436 | 1.11.1.1.1.1 | Probe - Databases > Tansaction Log | 6d? | 2007-05-03 | 2007-05-10 |  | 5.53d |  | Vicky Sherrouse | 48h |
| 437 | 1.11.1.1.1.2 | Probe - support/integration | 2d? | 2007-04-26 | 2007-05-11 |  | 4.53d |  | Vicky Sherrouse [50%] | 8h |
| 438 | 1.11.1.2 | **Desktop Client** | 7d? | 2007-05-03 | 2007-05-14 |  | 4d |  |  | 56h |
| 439 | 1.11.1.2.1 | **Views** | 7d? | 2007-05-03 | 2007-05-14 |  | 4d |  |  | 56h |
| 440 | 1.11.1.2.1.1 | Server > Databases / Transaction Log - Layout | 3d? | 2007-05-03 | 2007-05-08 |  | 4d | 0d | Mike O'Neal | 24h |
| 441 | 1.11.1.2.1.2 | Server > Databases / Transaction Log - Data | 4d? | 2007-05-08 | 2007-05-14 | 440 | 4d |  | Mike O'Neal | 32h |
| 442 | 1.11.1.3 | **Unit Testing** | 9.53d? | 2007-05-03 | 2007-05-16 |  | 2d |  |  | 20.3h |
| 443 | 1.11.1.3.1 | Trent | 0.01d? | 2007-05-14 | 2007-05-14 |  | 3.62d |  | Trent Miskelly | 0.1h |
| 444 | 1.11.1.3.2 | Vicky | 0.5d? | 2007-05-12 | 2007-05-12 |  | 4.03d |  | Vicky Sherrouse | 4h |
| 445 | 1.11.1.3.3 | Kurt | 0.01d? | 2007-05-09 | 2007-05-09 |  | 6.75d |  | Kurt Goolsbee | 0.1h |
| 446 | 1.11.1.3.4 | Mark | 0.01d? | 2007-05-03 | 2007-05-03 |  | 11.51d |  | Mark Lauitsen | 0.1h |
| 447 | 1.11.1.3.5 | Mike | 2d? | 2007-05-14 | 2007-05-16 |  | 2d |  | Mike O'Neal | 16h |
| 448 | 1.11.1.4 | **Previous Milestone PRs** | 11.51d? | 2007-05-03 | 2007-05-18 |  | 0d |  |  | 80h |
| 449 | 1.11.1.4.1 | Trent | 2d? | 2007-05-14 | 2007-05-16 |  | 1.62d |  | Trent Miskelly | 16h |
| 450 | 1.11.1.4.2 | Vicky | 2d? | 2007-05-12 | 2007-05-16 |  | 2.02d |  | Vicky Sherrouse | 16h |
| 451 | 1.11.1.4.3 | Kurt | 2d? | 2007-05-09 | 2007-05-11 |  | 4.75d |  | Kurt Goolsbee | 16h |
| 452 | 1.11.1.4.4 | Mark | 2d? | 2007-05-03 | 2007-05-07 |  | 9.51d |  | Mark Lauitsen | 16h |
| 453 | 1.11.1.4.5 | Mike | 2d? | 2007-05-16 | 2007-05-18 |  | 0d |  | Mike O'Neal | 16h |
