# SQLdm Dev Schedule

Schedule from MS Project, 2007-12-10 to 2008-06-26.

## Calendars

- Standard: Mon-Fri 08:00-12:00, 13:00-17:00; Sat-Sun off. Exceptions (off unless hours are given): 2007-12-24 to 2007-12-25 (Christmas), 2007-12-31 (New Years Eve), 2008-01-01 (New Years).

## Resources

| Resource | Group |
| --- | --- |
| Trent Miskelly | Idera Development |
| Kurt Goolsbee | Idera Development |
| Vicky Sherrouse | Idera Development |
| Mike White | Idera Development |
| Shekhar Vaidya | Idera Development |

## Schedule

| ID | WBS | Task | Duration | Start | Finish | Total slack | Constraint | Resources | Work |
| --- | --- | --- | --- | --- | --- | --- | --- | --- | --- |
| 1 | 1 | **Customer PRs - Trent** | 137.5d | 2007-12-10 | 2008-06-24 | 2.5d |  |  | 324h |
| 2 | 1.1 | Customer PRs - Trent 1 | 1.5d | 2007-12-10 | 2007-12-11 | 138.5d | start no earlier than 2007-12-10 | Trent Miskelly | 12h |
| 3 | 1.2 | Customer PRs - Trent 2 | 1.5d | 2007-12-17 | 2007-12-18 | 133.5d | start no earlier than 2007-12-17 | Trent Miskelly | 12h |
| 4 | 1.3 | Customer PRs - Trent 3 | 1.5d | 2008-01-07 | 2008-01-08 | 122.5d | start no earlier than 2008-01-07 | Trent Miskelly | 12h |
| 5 | 1.4 | Customer PRs - Trent 4 | 1.5d | 2008-01-14 | 2008-01-15 | 117.5d | start no earlier than 2008-01-14 | Trent Miskelly | 12h |
| 6 | 1.5 | Customer PRs - Trent 5 | 1.5d | 2008-01-21 | 2008-01-22 | 112.5d | start no earlier than 2008-01-21 | Trent Miskelly | 12h |
| 7 | 1.6 | Customer PRs - Trent 6 | 1.5d | 2008-01-28 | 2008-01-29 | 107.5d | start no earlier than 2008-01-28 | Trent Miskelly | 12h |
| 8 | 1.7 | Customer PRs - Trent 7 | 1.5d | 2008-02-04 | 2008-02-05 | 102.5d | start no earlier than 2008-02-04 | Trent Miskelly | 12h |
| 9 | 1.8 | Customer PRs - Trent 8 | 1.5d | 2008-02-11 | 2008-02-12 | 97.5d | start no earlier than 2008-02-11 | Trent Miskelly | 12h |
| 10 | 1.9 | Customer PRs - Trent 9 | 1.5d | 2008-02-18 | 2008-02-19 | 92.5d | start no earlier than 2008-02-18 | Trent Miskelly | 12h |
| 11 | 1.10 | Customer PRs - Trent 10 | 1.5d | 2008-02-25 | 2008-02-26 | 87.5d | start no earlier than 2008-02-25 | Trent Miskelly | 12h |
| 12 | 1.11 | Customer PRs - Trent 11 | 1.5d | 2008-03-03 | 2008-03-04 | 82.5d | start no earlier than 2008-03-03 | Trent Miskelly | 12h |
| 13 | 1.12 | Customer PRs - Trent 12 | 1.5d | 2008-03-10 | 2008-03-11 | 77.5d | start no earlier than 2008-03-10 | Trent Miskelly | 12h |
| 14 | 1.13 | Customer PRs - Trent 13 | 1.5d | 2008-03-17 | 2008-03-18 | 72.5d | start no earlier than 2008-03-17 | Trent Miskelly | 12h |
| 15 | 1.14 | Customer PRs - Trent 14 | 1.5d | 2008-03-24 | 2008-03-25 | 67.5d | start no earlier than 2008-03-24 | Trent Miskelly | 12h |
| 16 | 1.15 | Customer PRs - Trent 15 | 1.5d | 2008-03-31 | 2008-04-01 | 62.5d | start no earlier than 2008-03-31 | Trent Miskelly | 12h |
| 17 | 1.16 | Customer PRs - Trent 16 | 1.5d | 2008-04-07 | 2008-04-08 | 57.5d | start no earlier than 2008-04-07 | Trent Miskelly | 12h |
| 18 | 1.17 | Customer PRs - Trent 17 | 1.5d | 2008-04-14 | 2008-04-15 | 52.5d | start no earlier than 2008-04-14 | Trent Miskelly | 12h |
| 19 | 1.18 | Customer PRs - Trent 18 | 1.5d | 2008-04-21 | 2008-04-22 | 47.5d | start no earlier than 2008-04-21 | Trent Miskelly | 12h |
| 20 | 1.19 | Customer PRs - Trent 19 | 1.5d | 2008-04-28 | 2008-04-29 | 42.5d | start no earlier than 2008-04-28 | Trent Miskelly | 12h |
| 21 | 1.20 | Customer PRs - Trent 20 | 1.5d | 2008-05-05 | 2008-05-06 | 37.5d | start no earlier than 2008-05-05 | Trent Miskelly | 12h |
| 22 | 1.21 | Customer PRs - Trent 21 | 1.5d | 2008-05-12 | 2008-05-13 | 32.5d | start no earlier than 2008-05-12 | Trent Miskelly | 12h |
| 23 | 1.22 | Customer PRs - Trent 22 | 1.5d | 2008-05-19 | 2008-05-20 | 27.5d | start no earlier than 2008-05-19 | Trent Miskelly | 12h |
| 24 | 1.23 | Customer PRs - Trent 23 | 1.5d | 2008-05-26 | 2008-05-27 | 22.5d | start no earlier than 2008-05-26 | Trent Miskelly | 12h |
| 25 | 1.24 | Customer PRs - Trent 24 | 1.5d | 2008-06-02 | 2008-06-03 | 17.5d | start no earlier than 2008-06-02 | Trent Miskelly | 12h |
| 26 | 1.25 | Customer PRs - Trent 25 | 1.5d | 2008-06-09 | 2008-06-10 | 12.5d | start no earlier than 2008-06-09 | Trent Miskelly | 12h |
| 27 | 1.26 | Customer PRs - Trent 26 | 1.5d | 2008-06-16 | 2008-06-17 | 7.5d | start no earlier than 2008-06-16 | Trent Miskelly | 12h |
| 28 | 1.27 | Customer PRs - Trent 27 | 1.5d | 2008-06-23 | 2008-06-24 | 2.5d | start no earlier than 2008-06-23 | Trent Miskelly | 12h |

| ID | WBS | Task | Duration | Start | Finish | Total slack | Constraint | Resources | Work |
| --- | --- | --- | --- | --- | --- | --- | --- | --- | --- |
| 29 | 2 | **Customer PRs - Kurt** | 137.5d | 2007-12-10 | 2008-06-24 | 2.5d |  |  | 324h |
| 30 | 2.1 | Customer PRs - Kurt 1 | 1.5d | 2007-12-10 | 2007-12-11 | 138.5d | start no earlier than 2007-12-10 | Kurt Goolsbee | 12h |
| 31 | 2.2 | Customer PRs - Kurt 2 | 1.5d | 2007-12-19 | 2007-12-20 | 131.5d | start no earlier than 2007-12-17 | Kurt Goolsbee | 12h |
| 32 | 2.3 | Customer PRs - Kurt 3 | 1.5d | 2008-01-07 | 2008-01-08 | 122.5d | start no earlier than 2008-01-07 | Kurt Goolsbee | 12h |
| 33 | 2.4 | Customer PRs - Kurt 4 | 1.5d | 2008-01-14 | 2008-01-15 | 117.5d | start no earlier than 2008-01-14 | Kurt Goolsbee | 12h |
| 34 | 2.5 | Customer PRs - Kurt 5 | 1.5d | 2008-01-21 | 2008-01-22 | 112.5d | start no earlier than 2008-01-21 | Kurt Goolsbee | 12h |
| 35 | 2.6 | Customer PRs - Kurt 6 | 1.5d | 2008-01-28 | 2008-01-29 | 107.5d | start no earlier than 2008-01-28 | Kurt Goolsbee | 12h |
| 36 | 2.7 | Customer PRs - Kurt 7 | 1.5d | 2008-02-04 | 2008-02-05 | 102.5d | start no earlier than 2008-02-04 | Kurt Goolsbee | 12h |
| 37 | 2.8 | Customer PRs - Kurt 8 | 1.5d | 2008-02-11 | 2008-02-12 | 97.5d | start no earlier than 2008-02-11 | Kurt Goolsbee | 12h |
| 38 | 2.9 | Customer PRs - Kurt 9 | 1.5d | 2008-02-18 | 2008-02-19 | 92.5d | start no earlier than 2008-02-18 | Kurt Goolsbee | 12h |
| 39 | 2.10 | Customer PRs - Kurt 10 | 1.5d | 2008-02-25 | 2008-02-26 | 87.5d | start no earlier than 2008-02-25 | Kurt Goolsbee | 12h |
| 40 | 2.11 | Customer PRs - Kurt 11 | 1.5d | 2008-03-03 | 2008-03-04 | 82.5d | start no earlier than 2008-03-03 | Kurt Goolsbee | 12h |
| 41 | 2.12 | Customer PRs - Kurt 12 | 1.5d | 2008-03-10 | 2008-03-11 | 77.5d | start no earlier than 2008-03-10 | Kurt Goolsbee | 12h |
| 42 | 2.13 | Customer PRs - Kurt 13 | 1.5d | 2008-03-17 | 2008-03-18 | 72.5d | start no earlier than 2008-03-17 | Kurt Goolsbee | 12h |
| 43 | 2.14 | Customer PRs - Kurt 14 | 1.5d | 2008-03-24 | 2008-03-25 | 67.5d | start no earlier than 2008-03-24 | Kurt Goolsbee | 12h |
| 44 | 2.15 | Customer PRs - Kurt 15 | 1.5d | 2008-03-31 | 2008-04-01 | 62.5d | start no earlier than 2008-03-31 | Kurt Goolsbee | 12h |
| 45 | 2.16 | Customer PRs - Kurt 16 | 1.5d | 2008-04-07 | 2008-04-08 | 57.5d | start no earlier than 2008-04-07 | Kurt Goolsbee | 12h |
| 46 | 2.17 | Customer PRs - Kurt 17 | 1.5d | 2008-04-14 | 2008-04-15 | 52.5d | start no earlier than 2008-04-14 | Kurt Goolsbee | 12h |
| 47 | 2.18 | Customer PRs - Kurt 18 | 1.5d | 2008-04-21 | 2008-04-22 | 47.5d | start no earlier than 2008-04-21 | Kurt Goolsbee | 12h |
| 48 | 2.19 | Customer PRs - Kurt 19 | 1.5d | 2008-04-28 | 2008-04-29 | 42.5d | start no earlier than 2008-04-28 | Kurt Goolsbee | 12h |
| 49 | 2.20 | Customer PRs - Kurt 20 | 1.5d | 2008-05-05 | 2008-05-06 | 37.5d | start no earlier than 2008-05-05 | Kurt Goolsbee | 12h |
| 50 | 2.21 | Customer PRs - Kurt 21 | 1.5d | 2008-05-12 | 2008-05-13 | 32.5d | start no earlier than 2008-05-12 | Kurt Goolsbee | 12h |
| 51 | 2.22 | Customer PRs - Kurt 22 | 1.5d | 2008-05-19 | 2008-05-20 | 27.5d | start no earlier than 2008-05-19 | Kurt Goolsbee | 12h |
| 52 | 2.23 | Customer PRs - Kurt 23 | 1.5d | 2008-05-26 | 2008-05-27 | 22.5d | start no earlier than 2008-05-26 | Kurt Goolsbee | 12h |
| 53 | 2.24 | Customer PRs - Kurt 24 | 1.5d | 2008-06-02 | 2008-06-03 | 17.5d | start no earlier than 2008-06-02 | Kurt Goolsbee | 12h |
| 54 | 2.25 | Customer PRs - Kurt 25 | 1.5d | 2008-06-09 | 2008-06-10 | 12.5d | start no earlier than 2008-06-09 | Kurt Goolsbee | 12h |
| 55 | 2.26 | Customer PRs - Kurt 26 | 1.5d | 2008-06-16 | 2008-06-17 | 7.5d | start no earlier than 2008-06-16 | Kurt Goolsbee | 12h |
| 56 | 2.27 | Customer PRs - Kurt 27 | 1.5d | 2008-06-23 | 2008-06-24 | 2.5d | start no earlier than 2008-06-23 | Kurt Goolsbee | 12h |

| ID | WBS | Task | Type | Duration | Start | Finish | Total slack | Constraint | Resources | Work |
| --- | --- | --- | --- | --- | --- | --- | --- | --- | --- | --- |
| 57 | 3 | **Customer PRs - Vicky** |  | 137.5d | 2007-12-10 | 2008-06-24 | 2.5d |  |  | 328h |
| 58 | 3.1 | Customer PRs - Vicky 1 |  | 1.5d | 2007-12-10 | 2007-12-11 | 138.5d | start no earlier than 2007-12-10 | Vicky Sherrouse | 12h |
| 59 | 3.2 | Customer PRs - Vicky 2 |  | 1.5d | 2007-12-18 | 2007-12-19 | 132.5d | start no earlier than 2007-12-17 | Vicky Sherrouse | 12h |
| 60 | 3.3 | Customer PRs - Vicky 3 |  | 1.5d | 2008-01-07 | 2008-01-08 | 122.5d | start no earlier than 2008-01-07 | Vicky Sherrouse | 12h |
| 61 | 3.4 | Customer PRs - Vicky 4 |  | 1.5d | 2008-01-14 | 2008-01-15 | 117.5d | start no earlier than 2008-01-14 | Vicky Sherrouse | 12h |
| 62 | 3.5 | Customer PRs - Vicky 5 |  | 2d | 2008-01-23 | 2008-01-24 | 110d | start no earlier than 2008-01-23 | Vicky Sherrouse | 16h |
| 63 | 3.6 | Customer PRs - Vicky 6 |  | 1.5d | 2008-01-28 | 2008-01-29 | 107.5d | start no earlier than 2008-01-28 | Vicky Sherrouse | 12h |
| 64 | 3.7 | Customer PRs - Vicky 7 |  | 3d | 2008-02-06 | 2008-02-08 | 99d | start no earlier than 2008-02-06 | Vicky Sherrouse | 24h |
| 65 | 3.8 | Customer PRs - Vicky 8 |  | 1.5d | 2008-02-11 | 2008-02-12 | 97.5d | start no earlier than 2008-02-11 | Vicky Sherrouse | 12h |
| 66 | 3.9 | Customer PRs - Vicky 9 |  | 1.5d | 2008-02-18 | 2008-02-19 | 92.5d | start no earlier than 2008-02-18 | Vicky Sherrouse | 12h |
| 67 | 3.10 | Customer PRs - Vicky 10 |  | 1.5d | 2008-02-25 | 2008-02-26 | 87.5d | start no earlier than 2008-02-25 | Vicky Sherrouse | 12h |
| 68 | 3.11 | Customer PRs - Vicky 11 |  | 1.5d | 2008-03-03 | 2008-03-04 | 82.5d | start no earlier than 2008-03-03 | Vicky Sherrouse | 12h |
| 69 | 3.12 | Customer PRs - Vicky 12 |  | 1.5d | 2008-03-10 | 2008-03-11 | 77.5d | start no earlier than 2008-03-10 | Vicky Sherrouse | 12h |
| 70 | 3.13 | Customer PRs - Vicky 13 |  | 1.5d | 2008-03-17 | 2008-03-18 | 72.5d | start no earlier than 2008-03-17 | Vicky Sherrouse | 12h |
| 71 | 3.14 | Customer PRs - Vicky 14 |  | 1.5d | 2008-03-24 | 2008-03-25 | 67.5d | start no earlier than 2008-03-24 | Vicky Sherrouse | 12h |
| 72 | 3.15 | Customer PRs - Vicky 15 |  | 1.5d | 2008-03-31 | 2008-04-01 | 62.5d | start no earlier than 2008-03-31 | Vicky Sherrouse | 12h |
| 73 | 3.16 | Customer PRs - Vicky 16 |  | 1.5d | 2008-04-07 | 2008-04-08 | 57.5d | start no earlier than 2008-04-07 | Vicky Sherrouse | 12h |
| 74 | 3.17 | Customer PRs - Vicky 17 | milestone | 0d | 2008-04-14 | 2008-04-14 | 54d | start no earlier than 2008-04-14 | Vicky Sherrouse |  |
| 75 | 3.18 | Customer PRs - Vicky 18 |  | 1.5d | 2008-04-22 | 2008-04-23 | 46.5d | start no earlier than 2008-04-21 | Vicky Sherrouse | 12h |
| 76 | 3.19 | Customer PRs - Vicky 19 |  | 1.5d | 2008-04-28 | 2008-04-29 | 42.5d | start no earlier than 2008-04-28 | Vicky Sherrouse | 12h |
| 77 | 3.20 | Customer PRs - Vicky 20 |  | 1.5d | 2008-05-05 | 2008-05-06 | 37.5d | start no earlier than 2008-05-05 | Vicky Sherrouse | 12h |
| 78 | 3.21 | Customer PRs - Vicky 21 |  | 1.5d | 2008-05-12 | 2008-05-13 | 32.5d | start no earlier than 2008-05-12 | Vicky Sherrouse | 12h |
| 79 | 3.22 | Customer PRs - Vicky 22 |  | 1.5d | 2008-05-19 | 2008-05-20 | 27.5d | start no earlier than 2008-05-19 | Vicky Sherrouse | 12h |
| 80 | 3.23 | Customer PRs - Vicky 23 |  | 1.5d | 2008-05-26 | 2008-05-27 | 22.5d | start no earlier than 2008-05-26 | Vicky Sherrouse | 12h |
| 81 | 3.24 | Customer PRs - Vicky 24 |  | 1.5d | 2008-06-02 | 2008-06-03 | 17.5d | start no earlier than 2008-06-02 | Vicky Sherrouse | 12h |
| 82 | 3.25 | Customer PRs - Vicky 25 |  | 1.5d | 2008-06-09 | 2008-06-10 | 12.5d | start no earlier than 2008-06-09 | Vicky Sherrouse | 12h |
| 83 | 3.26 | Customer PRs - Vicky 26 |  | 1.5d | 2008-06-16 | 2008-06-17 | 7.5d | start no earlier than 2008-06-16 | Vicky Sherrouse | 12h |
| 84 | 3.27 | Customer PRs - Vicky 27 |  | 1.5d | 2008-06-23 | 2008-06-24 | 2.5d | start no earlier than 2008-06-23 | Vicky Sherrouse | 12h |

| ID | WBS | Task | Type | Duration | Start | Finish | Total slack | Constraint | Resources | Work |
| --- | --- | --- | --- | --- | --- | --- | --- | --- | --- | --- |
| 85 | 4 | **Customer PRs - Shekhar** |  | 137.5d | 2007-12-10 | 2008-06-24 | 2.5d |  |  | 300h |
| 86 | 4.1 | Customer PRs - Shekhar 1 |  | 1.5d | 2007-12-10 | 2007-12-11 | 138.5d | start no earlier than 2007-12-10 | Shekhar Vaidya | 12h |
| 87 | 4.2 | Customer PRs - Shekhar 2 |  | 1.5d | 2007-12-17 | 2007-12-18 | 133.5d | start no earlier than 2007-12-17 | Shekhar Vaidya | 12h |
| 88 | 4.3 | Customer PRs - Shekhar 3 |  | 1.5d | 2008-01-07 | 2008-01-08 | 122.5d | start no earlier than 2008-01-07 | Shekhar Vaidya | 12h |
| 89 | 4.4 | Customer PRs - Shekhar 4 |  | 1.5d | 2008-01-14 | 2008-01-15 | 117.5d | start no earlier than 2008-01-14 | Shekhar Vaidya | 12h |
| 90 | 4.5 | Customer PRs - Shekhar 5 |  | 1.5d | 2008-01-21 | 2008-01-22 | 112.5d | start no earlier than 2008-01-21 | Shekhar Vaidya | 12h |
| 91 | 4.6 | Customer PRs - Shekhar 6 |  | 1.5d | 2008-01-28 | 2008-01-29 | 107.5d | start no earlier than 2008-01-28 | Shekhar Vaidya | 12h |
| 92 | 4.7 | Customer PRs - Shekhar 7 | milestone | 0d | 2008-02-04 | 2008-02-04 | 104d | start no earlier than 2008-02-04 | Shekhar Vaidya |  |
| 93 | 4.8 | Customer PRs - Shekhar 8 | milestone | 0d | 2008-02-11 | 2008-02-11 | 99d | start no earlier than 2008-02-11 | Shekhar Vaidya |  |
| 94 | 4.9 | Customer PRs - Shekhar 9 |  | 1.5d | 2008-02-18 | 2008-02-19 | 92.5d | start no earlier than 2008-02-18 | Shekhar Vaidya | 12h |
| 95 | 4.10 | Customer PRs - Shekhar 10 |  | 1.5d | 2008-02-25 | 2008-02-26 | 87.5d | start no earlier than 2008-02-25 | Shekhar Vaidya | 12h |
| 96 | 4.11 | Customer PRs - Shekhar 11 |  | 1.5d | 2008-03-03 | 2008-03-04 | 82.5d | start no earlier than 2008-03-03 | Shekhar Vaidya | 12h |
| 97 | 4.12 | Customer PRs - Shekhar 12 |  | 1.5d | 2008-03-10 | 2008-03-11 | 77.5d | start no earlier than 2008-03-10 | Shekhar Vaidya | 12h |
| 98 | 4.13 | Customer PRs - Shekhar 13 |  | 1.5d | 2008-03-17 | 2008-03-18 | 72.5d | start no earlier than 2008-03-17 | Shekhar Vaidya | 12h |
| 99 | 4.14 | Customer PRs - Shekhar 14 |  | 1.5d | 2008-03-24 | 2008-03-25 | 67.5d | start no earlier than 2008-03-24 | Shekhar Vaidya | 12h |
| 100 | 4.15 | Customer PRs - Shekhar 15 |  | 1.5d | 2008-03-31 | 2008-04-01 | 62.5d | start no earlier than 2008-03-31 | Shekhar Vaidya | 12h |
| 101 | 4.16 | Customer PRs - Shekhar 16 |  | 1.5d | 2008-04-07 | 2008-04-08 | 57.5d | start no earlier than 2008-04-07 | Shekhar Vaidya | 12h |
| 102 | 4.17 | Customer PRs - Shekhar 17 |  | 1.5d | 2008-04-14 | 2008-04-15 | 52.5d | start no earlier than 2008-04-14 | Shekhar Vaidya | 12h |
| 103 | 4.18 | Customer PRs - Shekhar 18 |  | 1.5d | 2008-04-21 | 2008-04-22 | 47.5d | start no earlier than 2008-04-21 | Shekhar Vaidya | 12h |
| 104 | 4.19 | Customer PRs - Shekhar 19 |  | 1.5d | 2008-04-28 | 2008-04-29 | 42.5d | start no earlier than 2008-04-28 | Shekhar Vaidya | 12h |
| 105 | 4.20 | Customer PRs - Shekhar 20 |  | 1.5d | 2008-05-05 | 2008-05-06 | 37.5d | start no earlier than 2008-05-05 | Shekhar Vaidya | 12h |
| 106 | 4.21 | Customer PRs - Shekhar 21 |  | 1.5d | 2008-05-12 | 2008-05-13 | 32.5d | start no earlier than 2008-05-12 | Shekhar Vaidya | 12h |
| 107 | 4.22 | Customer PRs - Shekhar 22 |  | 1.5d | 2008-05-19 | 2008-05-20 | 27.5d | start no earlier than 2008-05-19 | Shekhar Vaidya | 12h |
| 108 | 4.23 | Customer PRs - Shekhar 23 |  | 1.5d | 2008-05-26 | 2008-05-27 | 22.5d | start no earlier than 2008-05-26 | Shekhar Vaidya | 12h |
| 109 | 4.24 | Customer PRs - Shekhar 24 |  | 1.5d | 2008-06-02 | 2008-06-03 | 17.5d | start no earlier than 2008-06-02 | Shekhar Vaidya | 12h |
| 110 | 4.25 | Customer PRs - Shekhar 25 |  | 1.5d | 2008-06-09 | 2008-06-10 | 12.5d | start no earlier than 2008-06-09 | Shekhar Vaidya | 12h |
| 111 | 4.26 | Customer PRs - Shekhar 26 |  | 1.5d | 2008-06-16 | 2008-06-17 | 7.5d | start no earlier than 2008-06-16 | Shekhar Vaidya | 12h |
| 112 | 4.27 | Customer PRs - Shekhar 27 |  | 1.5d | 2008-06-23 | 2008-06-24 | 2.5d | start no earlier than 2008-06-23 | Shekhar Vaidya | 12h |

| ID | WBS | Task | Type | Duration | Start | Finish | Total slack | Constraint | Resources | Work |
| --- | --- | --- | --- | --- | --- | --- | --- | --- | --- | --- |
| 114 | 5 | **Lead Work - Shekhar** |  | 138d | 2007-12-12 | 2008-06-26 | 0d |  |  | 448h |
| 115 | 5.1 | Lead Work - Shekhar 1 |  | 2d | 2007-12-12 | 2007-12-13 | 136d | start no earlier than 2007-12-12 | Shekhar Vaidya | 16h |
| 116 | 5.2 | Lead Work - Shekhar 2 |  | 2d | 2007-12-19 | 2007-12-20 | 131d | start no earlier than 2007-12-19 | Shekhar Vaidya | 16h |
| 117 | 5.3 | Lead Work - Shekhar 3 |  | 2d | 2007-12-26 | 2007-12-27 | 128d | start no earlier than 2007-12-26 | Shekhar Vaidya | 16h |
| 118 | 5.4 | Lead Work - Shekhar 4 |  | 2d | 2008-01-02 | 2008-01-03 | 125d | start no earlier than 2008-01-02 | Shekhar Vaidya | 16h |
| 119 | 5.5 | Lead Work - Shekhar 5 |  | 2d | 2008-01-09 | 2008-01-10 | 120d | start no earlier than 2008-01-09 | Shekhar Vaidya | 16h |
| 120 | 5.6 | Lead Work - Shekhar 6 |  | 2d | 2008-01-16 | 2008-01-17 | 115d | start no earlier than 2008-01-16 | Shekhar Vaidya | 16h |
| 121 | 5.7 | Lead Work - Shekhar 7 |  | 2d | 2008-01-23 | 2008-01-24 | 110d | start no earlier than 2008-01-23 | Shekhar Vaidya | 16h |
| 122 | 5.8 | Lead Work - Shekhar 8 |  | 2d | 2008-01-30 | 2008-01-31 | 105d | start no earlier than 2008-01-30 | Shekhar Vaidya | 16h |
| 123 | 5.9 | Lead Work - Shekhar 9 | milestone | 0d | 2008-02-06 | 2008-02-06 | 102d | start no earlier than 2008-02-06 | Shekhar Vaidya |  |
| 124 | 5.10 | Lead Work - Shekhar 10 |  | 2d | 2008-02-13 | 2008-02-14 | 95d | start no earlier than 2008-02-13 | Shekhar Vaidya | 16h |
| 125 | 5.11 | Lead Work - Shekhar 11 |  | 2d | 2008-02-20 | 2008-02-21 | 90d | start no earlier than 2008-02-20 | Shekhar Vaidya | 16h |
| 126 | 5.12 | Lead Work - Shekhar 12 |  | 2d | 2008-02-27 | 2008-02-28 | 85d | start no earlier than 2008-02-27 | Shekhar Vaidya | 16h |
| 127 | 5.13 | Lead Work - Shekhar 13 |  | 2d | 2008-03-05 | 2008-03-06 | 80d | start no earlier than 2008-03-05 | Shekhar Vaidya | 16h |
| 128 | 5.14 | Lead Work - Shekhar 14 |  | 2d | 2008-03-12 | 2008-03-13 | 75d | start no earlier than 2008-03-12 | Shekhar Vaidya | 16h |
| 129 | 5.15 | Lead Work - Shekhar 15 |  | 2d | 2008-03-19 | 2008-03-20 | 70d | start no earlier than 2008-03-19 | Shekhar Vaidya | 16h |
| 130 | 5.16 | Lead Work - Shekhar 16 |  | 2d | 2008-03-26 | 2008-03-27 | 65d | start no earlier than 2008-03-26 | Shekhar Vaidya | 16h |
| 131 | 5.17 | Lead Work - Shekhar 17 |  | 2d | 2008-04-02 | 2008-04-03 | 60d | start no earlier than 2008-04-02 | Shekhar Vaidya | 16h |
| 132 | 5.18 | Lead Work - Shekhar 18 |  | 2d | 2008-04-09 | 2008-04-10 | 55d | start no earlier than 2008-04-09 | Shekhar Vaidya | 16h |
| 133 | 5.19 | Lead Work - Shekhar 19 |  | 2d | 2008-04-16 | 2008-04-17 | 50d | start no earlier than 2008-04-16 | Shekhar Vaidya | 16h |
| 134 | 5.20 | Lead Work - Shekhar 20 |  | 2d | 2008-04-23 | 2008-04-24 | 45d | start no earlier than 2008-04-23 | Shekhar Vaidya | 16h |
| 135 | 5.21 | Lead Work - Shekhar 21 |  | 2d | 2008-04-30 | 2008-05-01 | 40d | start no earlier than 2008-04-30 | Shekhar Vaidya | 16h |
| 136 | 5.22 | Lead Work - Shekhar 22 |  | 2d | 2008-05-07 | 2008-05-08 | 35d | start no earlier than 2008-05-07 | Shekhar Vaidya | 16h |
| 137 | 5.23 | Lead Work - Shekhar 23 |  | 2d | 2008-05-14 | 2008-05-15 | 30d | start no earlier than 2008-05-14 | Shekhar Vaidya | 16h |
| 138 | 5.24 | Lead Work - Shekhar 24 |  | 2d | 2008-05-21 | 2008-05-22 | 25d | start no earlier than 2008-05-21 | Shekhar Vaidya | 16h |
| 139 | 5.25 | Lead Work - Shekhar 25 |  | 2d | 2008-05-28 | 2008-05-29 | 20d | start no earlier than 2008-05-28 | Shekhar Vaidya | 16h |
| 140 | 5.26 | Lead Work - Shekhar 26 |  | 2d | 2008-06-04 | 2008-06-05 | 15d | start no earlier than 2008-06-04 | Shekhar Vaidya | 16h |
| 141 | 5.27 | Lead Work - Shekhar 27 |  | 2d | 2008-06-11 | 2008-06-12 | 10d | start no earlier than 2008-06-11 | Shekhar Vaidya | 16h |
| 142 | 5.28 | Lead Work - Shekhar 28 |  | 2d | 2008-06-18 | 2008-06-19 | 5d | start no earlier than 2008-06-18 | Shekhar Vaidya | 16h |
| 143 | 5.29 | Lead Work - Shekhar 29 |  | 2d | 2008-06-25 | 2008-06-26 | 0d | start no earlier than 2008-06-25 | Shekhar Vaidya | 16h |

| ID | WBS | Task | Type | Duration | Start | Finish | Predecessors | Total slack | Free slack | Resources | Work |
| --- | --- | --- | --- | --- | --- | --- | --- | --- | --- | --- | --- |
| 145 | 6 | **Milestone 1 - Install** |  | 20.5d | 2007-12-10 | 2008-01-11 |  | 81d |  |  | 208h |
| 146 | 6.1 | M1 Start - Trent | milestone | 0d | 2007-12-10 | 2007-12-10 |  | 82d | 0d | Trent Miskelly |  |
| 147 | 6.2 | M1 Start - Kurt | milestone | 0d | 2007-12-10 | 2007-12-10 |  | 82d | 0d | Kurt Goolsbee |  |
| 148 | 6.3 | M1 Start - Vicky | milestone | 0d | 2007-12-10 | 2007-12-10 |  | 81d | 0d | Vicky Sherrouse |  |
| 149 | 6.4 | M1 Start - Shekhar | milestone | 0d | 2007-12-10 | 2007-12-10 |  | 101d | 0d | Shekhar Vaidya |  |
| 150 | 6.5 | M1 Start - Mike White | milestone | 0d | 2007-12-10 | 2007-12-10 |  | 135d | 0d | Mike White |  |
| 151 | 6.6 | **Install** |  | 20.5d | 2007-12-10 | 2008-01-11 |  | 101d |  |  | 88h |
| 152 | 6.6.1 | Create new "Ready to Upgrade" screen |  | 0.5d | 2007-12-10 | 2007-12-10 | 150 | 135d | 0d | Mike White | 4h |
| 153 | 6.6.2 | Update service screen to appear in upgrade screen flow |  | 0.5d | 2007-12-10 | 2007-12-10 | 152 | 135d | 0d | Mike White | 4h |
| 154 | 6.6.3 | Update SQL Location screen to add feature after user is prompted |  | 1d | 2007-12-11 | 2007-12-11 | 153 | 135d | 0d | Mike White | 8h |
| 155 | 6.6.4 | DLL - get service account information for MS/CS |  | 6d | 2007-12-11 | 2008-01-11 | 149 | 99.5d | 0d | Shekhar Vaidya | 48h |
| 156 | 6.6.5 | Add defaulting of windows and SQL account (including text changes) |  | 1d | 2007-12-12 | 2007-12-12 | 154 | 135d | 0d | Mike White | 8h |
| 157 | 6.6.6 | Testing and validation |  | 2d | 2007-12-13 | 2007-12-14 | 156 | 135d | 0d | Mike White | 16h |
| 158 | 6.7 | **History Browser Services (HBS)** |  | 14.5d | 2007-12-11 | 2008-01-04 |  | 81d |  |  | 120h |
| 159 | 6.7.1 | HBS - CS - Add missing data to Server Details probe |  | 3d | 2007-12-11 | 2007-12-19 | 148 | 81d | 0d | Vicky Sherrouse | 24h |
| 160 | 6.7.2 | HBS - CS - Add Sessions and Locks probes to scheduled collection |  | 5d | 2007-12-20 | 2008-01-04 | 159 | 83d | 0d | Vicky Sherrouse | 40h |
| 161 | 6.7.3 | HBS - MS - Change state graph update process |  | 2d | 2007-12-11 | 2007-12-13 | 147 | 82d | 0d | Kurt Goolsbee | 16h |
| 162 | 6.7.4 | HBS - MS - Process new data and alerts |  | 2d | 2007-12-13 | 2007-12-20 | 161 | 80d | 0d | Kurt Goolsbee | 16h |
| 163 | 6.7.5 | HBS - Repository - Add new table and SPs |  | 2d | 2007-12-21 | 2008-01-02 | 162 | 77d | 0d | Kurt Goolsbee | 16h |
| 164 | 6.7.6 | HBS - Repository - Update script changes |  | 1d | 2008-01-03 | 2008-01-03 | 163 | 77d | 0d | Kurt Goolsbee | 8h |
| 165 | 6.8 | M1 Completion - Trent | milestone | 0d | 2007-12-10 | 2007-12-10 | 146 | 82d | 0d | Trent Miskelly |  |
| 166 | 6.9 | M1 Completion - Kurt | milestone | 0d | 2008-01-03 | 2008-01-03 | 164 | 77d | 0d | Kurt Goolsbee |  |
| 167 | 6.10 | M1 Completion - Vicky | milestone | 0d | 2008-01-04 | 2008-01-04 | 160 | 83d | 0d | Vicky Sherrouse |  |
| 168 | 6.11 | M1 Completion - Shekhar | milestone | 0d | 2008-01-11 | 2008-01-11 | 155 | 99.5d | 0d | Shekhar Vaidya |  |
| 169 | 6.12 | M1 Completion - Mike White | milestone | 0d | 2007-12-14 | 2007-12-14 | 157 | 135d |  | Mike White |  |

| ID | WBS | Task | Type | Duration | Start | Finish | Predecessors | Total slack | Free slack | Resources | Work |
| --- | --- | --- | --- | --- | --- | --- | --- | --- | --- | --- | --- |
| 171 | 7 | **Milestone SP3** |  | 20.5d | 2007-12-10 | 2008-01-11 |  | 82d |  |  | 24h |
| 172 | 7.1 | M SP3 Start - Trent | milestone | 0d | 2007-12-10 | 2007-12-10 | 165 | 82d | 0d | Trent Miskelly |  |
| 173 | 7.2 | M SP3 Start - Kurt | milestone | 0d | 2008-01-03 | 2008-01-03 | 166 | 77d | 0d | Kurt Goolsbee |  |
| 174 | 7.3 | M SP3 Start - Vicky | milestone | 0d | 2008-01-04 | 2008-01-04 | 167 | 83d | 0d | Vicky Sherrouse |  |
| 175 | 7.4 | M SP3 Start - Shekhar | milestone | 0d | 2008-01-11 | 2008-01-11 | 168 | 99.5d | 0d | Shekhar Vaidya |  |
| 176 | 7.5 | **SP3 PRs (SP3PR)** |  | 3d | 2008-01-08 | 2008-01-11 |  | 83d |  |  | 24h |
| 177 | 7.5.1 | SP3PR - Vicky |  | 3d | 2008-01-08 | 2008-01-11 | 174 | 83d | 0d | Vicky Sherrouse | 24h |
| 178 | 7.6 | M SP3 Completion - Trent | milestone | 0d | 2007-12-10 | 2007-12-10 | 172 | 82d | 0d | Trent Miskelly |  |
| 179 | 7.7 | M SP3 Completion - Kurt | milestone | 0d | 2008-01-03 | 2008-01-03 | 173 | 77d | 0d | Kurt Goolsbee |  |
| 180 | 7.8 | M SP3 Completion - Vicky | milestone | 0d | 2008-01-11 | 2008-01-11 | 177 | 83d | 0d | Vicky Sherrouse |  |
| 181 | 7.9 | M SP3 Completion - Shekhar | milestone | 0d | 2008-01-11 | 2008-01-11 | 175 | 99.5d | 0d | Shekhar Vaidya |  |
| 183 | 8 | **Milestone 2 - History Browser** |  | 45d | 2007-12-10 | 2008-02-14 |  | 77d |  |  | 224h |
| 184 | 8.1 | M2 Start - Trent | milestone | 0d | 2007-12-10 | 2007-12-10 | 178 | 82d | 0d | Trent Miskelly |  |
| 185 | 8.2 | M2 Start - Kurt | milestone | 0d | 2008-01-03 | 2008-01-03 | 179 | 77d | 0d | Kurt Goolsbee |  |
| 186 | 8.3 | M2 Start - Vicky | milestone | 0d | 2008-01-11 | 2008-01-11 | 180 | 83d | 0d | Vicky Sherrouse |  |
| 187 | 8.4 | M2 Start - Shekhar | milestone | 0d | 2008-01-11 | 2008-01-11 | 181 | 99.5d | 0d | Shekhar Vaidya |  |
| 188 | 8.5 | **History Browser (HB)** |  | 43.5d | 2007-12-11 | 2008-02-14 |  | 77d |  |  | 224h |
| 189 | 8.5.1 | HB - UI – Create History Browser control and dock logic |  | 5d | 2007-12-11 | 2007-12-20 | 184 | 81d | 4d | Trent Miskelly | 40h |
| 190 | 8.5.2 | HB - UI – Populate historical snapshots in History Browser |  | 2d | 2008-01-02 | 2008-01-03 | 189 | 77d | 0d | Trent Miskelly | 16h |
| 191 | 8.5.3 | HB - UI – Populate Overview > Summary with snapshot |  | 2d | 2008-01-04 | 2008-01-09 | 190 | 77d | 0d | Trent Miskelly | 16h |
| 192 | 8.5.4 | HB - UI – Populate Overview > Details with snapshot |  | 4d | 2008-01-09 | 2008-01-16 | 191 | 77d | 0d | Trent Miskelly | 32h |
| 193 | 8.5.5 | HB - UI – Populate Sessions > Summary with snapshot |  | 2d | 2008-01-17 | 2008-01-18 | 192 | 77d | 0d | Trent Miskelly | 16h |
| 194 | 8.5.6 | HB - UI – Populate Sessions > Details with snapshot |  | 2d | 2008-01-22 | 2008-01-24 | 193 | 77d | 0d | Trent Miskelly | 16h |
| 195 | 8.5.7 | HB - UI – Populate Sessions > Locks with snapshot |  | 2d | 2008-01-24 | 2008-01-29 | 194 | 77d | 0d | Trent Miskelly | 16h |
| 196 | 8.5.8 | HB - UI – Populate Sessions > Blocking with snapshot |  | 2d | 2008-01-30 | 2008-01-31 | 195 | 77d | 0d | Trent Miskelly | 16h |
| 197 | 8.5.9 | HB - UI – Add handing for unsupported views |  | 2d | 2008-02-01 | 2008-02-06 | 196 | 77d | 0d | Trent Miskelly | 16h |
| 198 | 8.5.10 | HB - UI – Add alert navigation to associated historical snapshot view |  | 2d | 2008-02-06 | 2008-02-08 | 197 | 77d | 0d | Trent Miskelly | 16h |
| 199 | 8.5.11 | HB - Unit and Integration Testing |  | 3d | 2008-02-08 | 2008-02-14 | 198 | 77d | 0d | Trent Miskelly | 24h |
| 200 | 8.6 | M2 Completion - Trent | milestone | 0d | 2008-02-14 | 2008-02-14 | 199 | 77d | 0d | Trent Miskelly |  |
| 201 | 8.7 | M2 Completion - Kurt | milestone | 0d | 2008-01-03 | 2008-01-03 | 185 | 77d | 0d | Kurt Goolsbee |  |
| 202 | 8.8 | M2 Completion - Vicky | milestone | 0d | 2008-01-11 | 2008-01-11 | 186 | 83d | 0d | Vicky Sherrouse |  |
| 203 | 8.9 | M2 Completion - Shekhar | milestone | 0d | 2008-01-11 | 2008-01-11 | 187 | 99.5d | 0d | Shekhar Vaidya |  |

| ID | WBS | Task | Type | Duration | Start | Finish | Predecessors | Total slack | Free slack | Resources | Work |
| --- | --- | --- | --- | --- | --- | --- | --- | --- | --- | --- | --- |
| 205 | 9 | **Milestone 3 - User Defined Counters** |  | 40d | 2008-01-03 | 2008-02-28 |  | 77d |  |  | 376h |
| 206 | 9.1 | M3 Start - Trent | milestone | 0d | 2008-02-14 | 2008-02-14 | 200 | 77d | 0d | Trent Miskelly |  |
| 207 | 9.2 | M3 Start - Kurt | milestone | 0d | 2008-01-03 | 2008-01-03 | 201 | 77d | 0d | Kurt Goolsbee |  |
| 208 | 9.3 | M3 Start - Vicky | milestone | 0d | 2008-01-11 | 2008-01-11 | 202 | 83d | 0d | Vicky Sherrouse |  |
| 209 | 9.4 | M3 Start - Shekhar | milestone | 0d | 2008-01-11 | 2008-01-11 | 203 | 99.5d | 0d | Shekhar Vaidya |  |
| 210 | 9.5 | **User Defined Counters (UDC)** |  | 40d | 2008-01-04 | 2008-02-28 |  | 77d |  |  | 336h |
| 211 | 9.5.1 | UDC - Repository - Changes (tables, SPs, etc.) 1 |  | 3d | 2008-01-11 | 2008-01-17 | 208 | 83d | 0d | Vicky Sherrouse | 24h |
| 212 | 9.5.2 | UDC - Repository - Changes (tables, SPs, etc.) 2 |  | 3d | 2008-01-04 | 2008-01-10 | 207 | 77d | 0d | Kurt Goolsbee | 24h |
| 213 | 9.5.3 | UDC - UI - User-Defined Counter Configuration |  | 5d | 2008-01-10 | 2008-01-18 | 212 | 77d | 0d | Kurt Goolsbee | 40h |
| 214 | 9.5.4 | UDC - UI - Server Properties Screen |  | 3d | 2008-01-22 | 2008-01-25 | 213 | 77d | 0d | Kurt Goolsbee | 24h |
| 215 | 9.5.5 | UDC - UI - Alert Configuration of Custom Counters |  | 3d | 2008-01-25 | 2008-01-31 | 214 | 77d | 0d | Kurt Goolsbee | 24h |
| 216 | 9.5.6 | UDC - UI - Custom Counters View |  | 5d | 2008-02-01 | 2008-02-12 | 215 | 77d | 0d | Kurt Goolsbee | 40h |
| 217 | 9.5.7 | UDC - Common – Updates to snapshot library |  | 3d | 2008-01-18 | 2008-01-22 | 211 | 83d | 0d | Vicky Sherrouse | 24h |
| 218 | 9.5.8 | UDC - CS - Custom OS metrics batch and replacement logic |  | 2d | 2008-01-25 | 2008-01-30 | 217 | 81.5d | 0d | Vicky Sherrouse | 16h |
| 219 | 9.5.9 | UDC - CS - Custom SQL counter batch and replacement logic |  | 2d | 2008-01-30 | 2008-02-01 | 218 | 81.5d | 0d | Vicky Sherrouse | 16h |
| 220 | 9.5.10 | UDC - CS - Custom SQL batch replacement logic |  | 1d | 2008-02-01 | 2008-02-04 | 219 | 81.5d | 0d | Vicky Sherrouse | 8h |
| 221 | 9.5.11 | UDC - CS - Add and integrate user-defined counter probe |  | 3d | 2008-02-04 | 2008-02-13 | 220 | 81.5d | 4.5d | Vicky Sherrouse | 24h |
| 222 | 9.5.12 | UDC - CS & MS – Updates to eventing logic for user-defined alerts |  | 4d | 2008-02-13 | 2008-02-20 | 216 | 77d | 0d | Kurt Goolsbee | 32h |
| 223 | 9.5.13 | UDC - Unit and Integration Testing |  | 5d | 2008-02-20 | 2008-02-28 | 221, 222 | 77d | 0d | Vicky Sherrouse | 40h |
| 224 | 9.6 | **Grooming Job (GJ)** |  | 6.5d | 2008-02-20 | 2008-02-28 |  | 77d |  |  | 40h |
| 225 | 9.6.1 | GJ - UI |  | 0.5d | 2008-02-20 | 2008-02-20 | 222 | 77d | 0d | Kurt Goolsbee | 4h |
| 226 | 9.6.2 | GJ - MS |  | 0.5d | 2008-02-21 | 2008-02-21 | 225 | 77d | 0d | Kurt Goolsbee | 4h |
| 227 | 9.6.3 | GJ - Repository |  | 3d | 2008-02-21 | 2008-02-27 | 226 | 77d | 0d | Kurt Goolsbee | 24h |
| 228 | 9.6.4 | GJ - Unit and Integration Testing |  | 1d | 2008-02-28 | 2008-02-28 | 227 | 77d | 0d | Kurt Goolsbee | 8h |
| 229 | 9.7 | M3 Completion - Trent | milestone | 0d | 2008-02-14 | 2008-02-14 | 206 | 77d | 0d | Trent Miskelly |  |
| 230 | 9.8 | M3 Completion - Kurt | milestone | 0d | 2008-02-28 | 2008-02-28 | 228 | 77d | 0d | Kurt Goolsbee |  |
| 231 | 9.9 | M3 Completion - Vicky | milestone | 0d | 2008-02-28 | 2008-02-28 | 223 | 77d | 0d | Vicky Sherrouse |  |
| 232 | 9.10 | M3 Completion - Shekhar | milestone | 0d | 2008-01-11 | 2008-01-11 | 209 | 99.5d | 21.5d | Shekhar Vaidya |  |

| ID | WBS | Task | Type | Duration | Start | Finish | Predecessors | Total slack | Free slack | Constraint | Resources | Work |
| --- | --- | --- | --- | --- | --- | --- | --- | --- | --- | --- | --- | --- |
| 234 | 10 | **Milestone 4 - Beta Ready** |  | 21d | 2008-02-12 | 2008-03-11 |  | 77d |  |  |  | 232h |
| 235 | 10.1 | M4 Start - Trent | milestone | 0d | 2008-02-14 | 2008-02-14 | 229 | 77d | 0d |  | Trent Miskelly |  |
| 236 | 10.2 | M4 Start - Kurt | milestone | 0d | 2008-02-28 | 2008-02-28 | 230 | 77d | 0d |  | Kurt Goolsbee |  |
| 237 | 10.3 | M4 Start - Vicky | milestone | 0d | 2008-02-28 | 2008-02-28 | 231 | 77d | 0d |  | Vicky Sherrouse |  |
| 238 | 10.4 | M4 Start - Shekhar | milestone | 0d | 2008-02-12 | 2008-02-12 | 232 | 78d | 0d | start no earlier than 2008-02-12 | Shekhar Vaidya |  |
| 239 | 10.5 | **SQL 2008 Support (S2008)** |  | 5.5d | 2008-02-29 | 2008-03-07 |  | 77d |  |  |  | 32h |
| 240 | 10.5.1 | S2008 - CS Changes |  | 3d | 2008-02-29 | 2008-03-06 | 237 | 77d | 0d |  | Vicky Sherrouse | 24h |
| 241 | 10.5.2 | S2008 - Unit and integation testing |  | 1d | 2008-03-06 | 2008-03-07 | 240 | 77d | 0d |  | Vicky Sherrouse | 8h |
| 242 | 10.6 | **New Feature PRs (NFP)** |  | 18d | 2008-02-15 | 2008-03-11 |  | 77d |  |  |  | 56h |
| 243 | 10.6.1 | NFP - Trent |  | 5d | 2008-02-15 | 2008-02-26 | 235 | 77d | 0d |  | Trent Miskelly | 40h |
| 244 | 10.6.2 | NFP - Kurt |  | 1d | 2008-02-29 | 2008-02-29 | 236 | 77d | 0d |  | Kurt Goolsbee | 8h |
| 245 | 10.6.3 | NFP - Vicky |  | 1d | 2008-03-07 | 2008-03-11 | 241 | 77d | 0d |  | Vicky Sherrouse | 8h |
| 246 | 10.7 | **Beta Bug Fixes (BBF)** |  | 10d | 2008-02-27 | 2008-03-11 |  | 77d |  |  |  | 88h |
| 247 | 10.7.1 | BBF - Trent |  | 7d | 2008-02-27 | 2008-03-11 | 243 | 77d | 0d |  | Trent Miskelly | 56h |
| 248 | 10.7.2 | BBF - Kurt |  | 4d | 2008-03-04 | 2008-03-11 | 244 | 77d | 0d |  | Kurt Goolsbee | 32h |
| 249 | 10.7.3 | BBF - Vicky | milestone | 0d | 2008-03-11 | 2008-03-11 | 245 | 77d | 0d |  | Vicky Sherrouse |  |
| 250 | 10.8 | **Out-of-proc sp_OA (sp_OA)** |  | 21d | 2008-02-12 | 2008-03-11 |  | 77d |  |  |  | 56h |
| 251 | 10.8.1 | sp_OA - MS changes |  | 2d | 2008-02-12 | 2008-02-15 | 238 | 78d | 0d |  | Shekhar Vaidya | 16h |
| 252 | 10.8.2 | sp_OA - CS changes |  | 2d | 2008-02-19 | 2008-02-26 | 251 | 78d | 0d |  | Shekhar Vaidya | 16h |
| 253 | 10.8.3 | sp_OA - Unit and Integration Testing |  | 3d | 2008-02-29 | 2008-03-11 | 252 | 77d | 0d |  | Shekhar Vaidya | 24h |
| 254 | 10.9 | M4 Completion - Trent | milestone | 0d | 2008-03-11 | 2008-03-11 | 247 | 77d |  |  | Trent Miskelly |  |
| 255 | 10.10 | M4 Completion - Kurt | milestone | 0d | 2008-03-11 | 2008-03-11 | 248 | 77d |  |  | Kurt Goolsbee |  |
| 256 | 10.11 | M4 Completion - Vicky | milestone | 0d | 2008-03-11 | 2008-03-11 | 249 | 77d |  |  | Vicky Sherrouse |  |
| 257 | 10.12 | M4 Completion - Shekhar | milestone | 0d | 2008-03-11 | 2008-03-11 | 253 | 77d |  |  | Shekhar Vaidya |  |

| ID | WBS | Task | Type | Duration | Start | Finish | Total slack |
| --- | --- | --- | --- | --- | --- | --- | --- |
| 259 | 11 | **DROPPED - Milestone 5 - Alert Based on Past Performance** |  | 4d | 2007-12-10 | 2007-12-13 | 136d |
| 260 | 11.1 | M5 Start - Trent | milestone | 0d | 2007-12-10 | 2007-12-10 | 140d |
| 261 | 11.2 | M5 Start - Kurt | milestone | 0d | 2007-12-10 | 2007-12-10 | 140d |
| 262 | 11.3 | M5 Start - Vicky | milestone | 0d | 2007-12-10 | 2007-12-10 | 140d |
| 263 | 11.4 | M5 Start - Shekhar | milestone | 0d | 2007-12-10 | 2007-12-10 | 140d |
| 264 | 11.5 | **Alert Based on Past Performance (ABPP)** |  | 4d | 2007-12-10 | 2007-12-13 | 136d |
| 265 | 11.5.1 | ABPP - MS |  | 1d | 2007-12-10 | 2007-12-10 | 139d |
| 266 | 11.5.2 | ABPP - Repository |  | 2d | 2007-12-10 | 2007-12-11 | 138d |
| 267 | 11.5.3 | ABPP - UI |  | 4d | 2007-12-10 | 2007-12-13 | 136d |
| 268 | 11.5.4 | ABPP - Unit and Integration Testing |  | 1d | 2007-12-10 | 2007-12-10 | 139d |
| 269 | 11.6 | **SQL 2008 Support (S2008)** |  | 3d | 2007-12-10 | 2007-12-12 | 137d |
| 270 | 11.6.1 | S2008 - CS Changes |  | 3d | 2007-12-10 | 2007-12-12 | 137d |
| 271 | 11.6.2 | S2008 - Unit and integation testing |  | 1d | 2007-12-10 | 2007-12-10 | 139d |
| 272 | 11.7 | M5 Completion - Trent | milestone | 0d | 2007-12-10 | 2007-12-10 | 140d |
| 273 | 11.8 | M5 Completion - Kurt | milestone | 0d | 2007-12-10 | 2007-12-10 | 140d |
| 274 | 11.9 | M5 Completion - Vicky | milestone | 0d | 2007-12-10 | 2007-12-10 | 140d |
| 275 | 11.10 | M5 Completion - Shekhar | milestone | 0d | 2007-12-10 | 2007-12-10 | 140d |
| 277 | 12 | **DROPPED - Milestone 6 - New Feature PRs** |  | 9d | 2007-12-10 | 2007-12-20 | 131d |
| 278 | 12.1 | M6 Start - Trent | milestone | 0d | 2007-12-10 | 2007-12-10 | 140d |
| 279 | 12.2 | M6 Start - Kurt | milestone | 0d | 2007-12-10 | 2007-12-10 | 140d |
| 280 | 12.3 | M6 Start - Vicky | milestone | 0d | 2007-12-10 | 2007-12-10 | 140d |
| 281 | 12.4 | M6 Start - Shekhar | milestone | 0d | 2007-12-10 | 2007-12-10 | 140d |
| 282 | 12.5 | **New Feature PRs (NFP)** |  | 9d | 2007-12-10 | 2007-12-20 | 131d |
| 283 | 12.5.1 | NFP - Trent |  | 9d | 2007-12-10 | 2007-12-20 | 131d |
| 284 | 12.5.2 | NFP - Kurt |  | 7d | 2007-12-10 | 2007-12-18 | 133d |
| 285 | 12.5.3 | NFP - Vicky |  | 6d | 2007-12-10 | 2007-12-17 | 134d |
| 286 | 12.6 | M6 Completion - Trent | milestone | 0d | 2007-12-10 | 2007-12-10 | 140d |
| 287 | 12.7 | M6 Completion - Kurt | milestone | 0d | 2007-12-10 | 2007-12-10 | 140d |
| 288 | 12.8 | M6 Completion - Vicky | milestone | 0d | 2007-12-10 | 2007-12-10 | 140d |
| 289 | 12.9 | M6 Completion - Shekhar | milestone | 0d | 2007-12-10 | 2007-12-10 | 140d |
